# WBS ENZO Y ALEXIS

How a schedule from MS Project changed from version to version. A marks actual dates.

## Version 1 (saved 2013-06-08)

| ID | WBS | Task | Duration | Start | Finish | Total float |
| --- | --- | --- | --- | --- | --- | --- |
| 1 | 1 | **Proyecto: S.A.P.O.** | 1d | 2013-05-20 | 2013-05-20 | 0d |
| 2 | 1.1 | **Gestión de Proyecto** | 1d | 2013-05-20 | 2013-05-20 | 0d |
| 3 | 1.1.1 | **Alcance** | 1d | 2013-05-20 | 2013-05-20 | 0d |
| 4 | 1.1.1.1 | **Desarrollo idea de Proyecto** | 1d | 2013-05-20 | 2013-05-20 | 0d |
| 5 |  | Definir objetivos | 1d | 2013-05-20 | 2013-05-20 | 0d |
| 6 |  | Definir ámbito | 1d | 2013-05-20 | 2013-05-20 | 0d |
| 7 |  | Analizar y definir solución | 1d | 2013-05-20 | 2013-05-20 | 0d |
| 8 | 1.1.1.2 | **Definición alcance de proyecto** | 1d | 2013-05-20 | 2013-05-20 | 0d |
| 9 |  | Elaborar Project Charter | 1d | 2013-05-20 | 2013-05-20 | 0d |
| 10 |  | Identificar supuestos y restricciones | 1d | 2013-05-20 | 2013-05-20 | 0d |
| 11 |  | Identificar entregables de trabajo | 1d | 2013-05-20 | 2013-05-20 | 0d |
| 12 |  | Definir roles participantes | 1d | 2013-05-20 | 2013-05-20 | 0d |
| 13 |  | Elaborar Scope Statement | 1d | 2013-05-20 | 2013-05-20 | 0d |
| 14 | 1.1.1.3 | **Desglose de trabajo (WBS)** | 1d | 2013-05-20 | 2013-05-20 | 0d |
| 15 |  | Identificar componentes y estructurar la WBS | 1d | 2013-05-20 | 2013-05-20 | 0d |
| 16 |  | Elaborar diccionario de la WBS | 1d | 2013-05-20 | 2013-05-20 | 0d |
| 17 |  | Realizar listado de actividades | 1d | 2013-05-20 | 2013-05-20 | 0d |
| 18 | 1.1.1.4 | **Planificar Iteraciones del proyecto** | 1d | 2013-05-20 | 2013-05-20 | 0d |
| 19 |  | Armar lista priorizada de requerimientos con el cliente | 1d | 2013-05-20 | 2013-05-20 | 0d |
| 20 |  | Definir requerimientos a incluir en cada iteración | 1d | 2013-05-20 | 2013-05-20 | 0d |
| 21 |  | Asignar recursos para cada iteración | 1d | 2013-05-20 | 2013-05-20 | 0d |
| 22 |  | Documentar planificación de las iteraciones | 1d | 2013-05-20 | 2013-05-20 | 0d |
| 23 | 1.1.2 | **Tiempo** | 1d | 2013-05-20 | 2013-05-20 | 0d |
| 24 | 1.1.2.1 | **Estimación de recursos y duración actividades** | 1d | 2013-05-20 | 2013-05-20 | 0d |
| 25 |  | Estimar duración actividades | 1d | 2013-05-20 | 2013-05-20 | 0d |
| 26 |  | Estimar recursos necesarios | 1d | 2013-05-20 | 2013-05-20 | 0d |
| 27 |  | Análisis de estimaciones | 1d | 2013-05-20 | 2013-05-20 | 0d |
| 28 | 1.1.2.2 | **Desarrollo del Cronograma** | 1d | 2013-05-20 | 2013-05-20 | 0d |
| 29 |  | Identificar hitos del proyecto | 1d | 2013-05-20 | 2013-05-20 | 0d |
| 30 |  | Identificar actividades críticas | 1d | 2013-05-20 | 2013-05-20 | 0d |
| 31 |  | Analizar secuenciamiento de actividades | 1d | 2013-05-20 | 2013-05-20 | 0d |
| 32 |  | Definir cronograma | 1d | 2013-05-20 | 2013-05-20 | 0d |
| 33 | 1.1.2.3 | **Control del Cronograma** | 1d | 2013-05-20 | 2013-05-20 | 0d |
| 34 |  | Determinar estado actual | 1d | 2013-05-20 | 2013-05-20 | 0d |
| 35 |  | Analizar factores que generan cambios | 1d | 2013-05-20 | 2013-05-20 | 0d |
| 36 |  | Gestionar cambios en el cronograma | 1d | 2013-05-20 | 2013-05-20 | 0d |
| 37 | 1.1.3 | **Riesgos** | 1d | 2013-05-20 | 2013-05-20 | 0d |
| 38 | 1.1.3.1 | **Planificación de la gestión de riesgos** | 1d | 2013-05-20 | 2013-05-20 | 0d |
| 39 |  | Definir metodologías | 1d | 2013-05-20 | 2013-05-20 | 0d |
| 40 |  | Definir roles y responsabilidades | 1d | 2013-05-20 | 2013-05-20 | 0d |
| 41 |  | Asignar recursos | 1d | 2013-05-20 | 2013-05-20 | 0d |
| 42 |  | Establecer frecuencia de supervisión y control | 1d | 2013-05-20 | 2013-05-20 | 0d |
| 43 | 1.1.3.2 | **Identificación y análisis de riesgos** | 1d | 2013-05-20 | 2013-05-20 | 0d |
| 44 |  | Listar riesgos del proyecto | 1d | 2013-05-20 | 2013-05-20 | 0d |
| 45 |  | Analizar probabilidad e impacto de los riesgos | 1d | 2013-05-20 | 2013-05-20 | 0d |
| 46 |  | Elaborar matriz de probabilidad e impacto | 1d | 2013-05-20 | 2013-05-20 | 0d |
| 47 | 1.1.3.3 | **Selección de riesgos y planes de respuesta** | 1d | 2013-05-20 | 2013-05-20 | 0d |
| 48 |  | Elegir criterio de selección | 1d | 2013-05-20 | 2013-05-20 | 0d |
| 49 |  | Seleccionar riesgos a contemplar | 1d | 2013-05-20 | 2013-05-20 | 0d |
| 50 |  | Definir estrategia de respuesta | 1d | 2013-05-20 | 2013-05-20 | 0d |
| 51 |  | Planificar estrategias | 1d | 2013-05-20 | 2013-05-20 | 0d |
| 52 |  | Documentar resultados | 1d | 2013-05-20 | 2013-05-20 | 0d |
| 53 | 1.1.3.4 | **Supervisión y control** | 1d | 2013-05-20 | 2013-05-20 | 0d |
| 54 |  | Supervisar y reevaluar los riesgos | 1d | 2013-05-20 | 2013-05-20 | 0d |
| 55 |  | Identificar nuevos riesgos | 1d | 2013-05-20 | 2013-05-20 | 0d |
| 56 |  | Documentar cambios en el plan | 1d | 2013-05-20 | 2013-05-20 | 0d |
| 57 | 1.1.4 | **Gestión de recursos humanos** | 1d | 2013-05-20 | 2013-05-20 | 0d |
| 58 | 1.1.4.1 | **Planificación** | 1d | 2013-05-20 | 2013-05-20 | 0d |
| 59 |  | Definir roles y responsabilidades | 1d | 2013-05-20 | 2013-05-20 | 0d |
| 60 |  | Definir calendario de recursos | 1d | 2013-05-20 | 2013-05-20 | 0d |
| 61 |  | Elaborar plantillas de documentación | 1d | 2013-05-20 | 2013-05-20 | 0d |
| 62 | 1.1.4.2 | **Gestión de reuniones** | 1d | 2013-05-20 | 2013-05-20 | 0d |
| 63 |  | Definir cheklist de temas a tratar | 1d | 2013-05-20 | 2013-05-20 | 0d |
| 64 |  | Establecer lugar, fecha y hora | 1d | 2013-05-20 | 2013-05-20 | 0d |
| 65 |  | Concretar reunión | 1d | 2013-05-20 | 2013-05-20 | 0d |
| 66 |  | Completar minuta de reunión semanal | 1d | 2013-05-20 | 2013-05-20 | 0d |
| 67 | 1.2 | **Producto** | 1d | 2013-05-20 | 2013-05-20 | 0d |
| 68 | 1.2.1 | **Relevamiento** | 1d | 2013-05-20 | 2013-05-20 | 0d |
| 69 | 1.2.1.1 | **Diseñar instrumento de relevamiento** | 1d | 2013-05-20 | 2013-05-20 | 0d |
| 70 |  | Definir ámbito de relevamiento | 1d | 2013-05-20 | 2013-05-20 | 0d |

| ID | WBS | Task | Duration | Start | Finish | Total float |
| --- | --- | --- | --- | --- | --- | --- |
| 71 |  | Seleccionar la herramienta de relevamiento apropiada | 1d | 2013-05-20 | 2013-05-20 | 0d |
| 72 |  | Seleccionar el medio de relevamiento | 1d | 2013-05-20 | 2013-05-20 | 0d |
| 73 |  | Elaborar listado de preguntas tentativas | 1d | 2013-05-20 | 2013-05-20 | 0d |
| 74 |  | Seleccionar las preguntas a realizar | 1d | 2013-05-20 | 2013-05-20 | 0d |
| 75 |  | Diseñar y confeccionar la herramienta | 1d | 2013-05-20 | 2013-05-20 | 0d |
| 76 |  | Estimar cantidad de formularios y emitir los mismos | 1d | 2013-05-20 | 2013-05-20 | 0d |
| 77 | 1.2.1.2 | **Relevar información** | 1d | 2013-05-20 | 2013-05-20 | 0d |
| 78 |  | Analizar el medio de relevamiento | 1d | 2013-05-20 | 2013-05-20 | 0d |
| 79 |  | Determinar fecha y hora de relevamiento. En caso de ser necesario, concertar cita con stakeholder | 1d | 2013-05-20 | 2013-05-20 | 0d |
| 80 |  | Preparar el relevamiento | 1d | 2013-05-20 | 2013-05-20 | 0d |
| 81 |  | Realizar relevamiento mediante la herramienta | 1d | 2013-05-20 | 2013-05-20 | 0d |
| 82 |  | Concluir el relevamiento realizado | 1d | 2013-05-20 | 2013-05-20 | 0d |
| 83 | 1.2.1.3 | **Analizar Información** | 1d | 2013-05-20 | 2013-05-20 | 0d |
| 84 |  | Organizar información recabada de acuerdo a criterios que simplifiquen su análisis | 1d | 2013-05-20 | 2013-05-20 | 0d |
| 85 |  | Analizar la información | 1d | 2013-05-20 | 2013-05-20 | 0d |
| 86 |  | Debatir grupalmente los resultados del análisis para comprender el funcionamiento de la organización | 1d | 2013-05-20 | 2013-05-20 | 0d |
| 87 |  | Elaborar conclusión de relevamiento destacando nuevos puntos a investigar | 1d | 2013-05-20 | 2013-05-20 | 0d |
| 88 | 1.2.1.4 | **Documentar el proceso de negocio** | 1d | 2013-05-20 | 2013-05-20 | 0d |
| 89 |  | Identificar y discutir grupalmente los diferentes procesos de negocio presentes en la organización | 1d | 2013-05-20 | 2013-05-20 | 0d |
| 90 |  | Seleccionar los procesos que serán afectados por el sistema de información | 1d | 2013-05-20 | 2013-05-20 | 0d |
| 91 |  | Confeccionar mapa global de los procesos de entorno | 1d | 2013-05-20 | 2013-05-20 | 0d |
| 92 |  | Describir los procesos identificados a los que da soporte el sistema de información | 1d | 2013-05-20 | 2013-05-20 | 0d |
| 93 |  | Identificar los problemas de los procesos actuales | 1d | 2013-05-20 | 2013-05-20 | 0d |
| 94 |  | Establecer puntos de mejora | 1d | 2013-05-20 | 2013-05-20 | 0d |
| 95 |  | Desarrollar una propuesta de mejora que contemple los problemas y los puntos de mejora identificados | 1d | 2013-05-20 | 2013-05-20 | 0d |
| 96 | 1.2.1.5 | **Aceptación del Cliente** | 1d | 2013-05-20 | 2013-05-20 | 0d |
| 97 |  | Enviar la documentación del proceso de negocio al cliente | 1d | 2013-05-20 | 2013-05-20 | 0d |
| 98 |  | Evaluar retroalementación del cliente | 1d | 2013-05-20 | 2013-05-20 | 0d |
| 99 |  | Actualizar documentación | 1d | 2013-05-20 | 2013-05-20 | 0d |
| 100 |  | Registrar aprobacion del cliente | 1d | 2013-05-20 | 2013-05-20 | 0d |
| 101 | 1.2.2 | **Requerimiento** | 1d | 2013-05-20 | 2013-05-20 | 0d |
| 102 | 1.2.2.1 | **Especificar requerimientos del sistema** | 1d | 2013-05-20 | 2013-05-20 | 0d |
| 103 |  | Identificar requerimientos globales de la organización | 1d | 2013-05-20 | 2013-05-20 | 0d |
| 104 |  | Identificar requerimientos detallados de la organización | 1d | 2013-05-20 | 2013-05-20 | 0d |
| 105 |  | Realizar descripción de requerimientos funcionales | 1d | 2013-05-20 | 2013-05-20 | 0d |
| 106 |  | Realizar descripción de requerimientos no funcionales | 1d | 2013-05-20 | 2013-05-20 | 0d |
| 107 | 1.2.2.2 | **Estructurar modelo de casos de uso del sistema** | 1d | 2013-05-20 | 2013-05-20 | 0d |
| 108 |  | Identificar y describir actores | 1d | 2013-05-20 | 2013-05-20 | 0d |
| 109 |  | Identificar relaciones entre los actores | 1d | 2013-05-20 | 2013-05-20 | 0d |
| 110 |  | Identificar Casos de Uso del sistema | 1d | 2013-05-20 | 2013-05-20 | 0d |
| 111 |  | Describir objetivos de casos de uso del sistema | 1d | 2013-05-20 | 2013-05-20 | 0d |
| 112 |  | Describir trazo grueso de casos de uso del sistema | 1d | 2013-05-20 | 2013-05-20 | 0d |
| 113 |  | Describir trazo fino de CU esenciales del sistema | 1d | 2013-05-20 | 2013-05-20 | 0d |
| 114 |  | Identificar relaciones entre casos de uso | 1d | 2013-05-20 | 2013-05-20 | 0d |
| 115 |  | Construir diagramas de caso de uso del sistema | 1d | 2013-05-20 | 2013-05-20 | 0d |
| 116 |  | Confeccionar documento de especificación de requerimiento del software | 1d | 2013-05-20 | 2013-05-20 | 0d |
| 117 | 1.2.2.3 | **Realizar modelo de objetos del dominio del problema(MODP)** | 1d | 2013-05-20 | 2013-05-20 | 0d |
| 118 |  | Identificar clases del dominio | 1d | 2013-05-20 | 2013-05-20 | 0d |
| 119 |  | Identificar atributos y métodos de clase | 1d | 2013-05-20 | 2013-05-20 | 0d |
| 120 |  | Identificar relaciones entre clases | 1d | 2013-05-20 | 2013-05-20 | 0d |
| 121 |  | Confecionar el diagrama de clases | 1d | 2013-05-20 | 2013-05-20 | 0d |
| 122 | 1.2.2.4 | **Construir prototipo de interfaz** | 1d | 2013-05-20 | 2013-05-20 | 0d |
| 123 |  | Definir un templaate para la interfaz y prototipos de interfaz | 1d | 2013-05-20 | 2013-05-20 | 0d |
| 124 |  | Identificar los casos de uso del sistema que requieren prototipos de interfaz | 1d | 2013-05-20 | 2013-05-20 | 0d |
| 125 |  | Definir los datos necesarios para cada interfaz | 1d | 2013-05-20 | 2013-05-20 | 0d |
| 126 |  | Diseñar interfaces de cada caso de uso identificado | 1d | 2013-05-20 | 2013-05-20 | 0d |
| 127 |  | Definir y diseñar navegabilidad de las interfaces | 1d | 2013-05-20 | 2013-05-20 | 0d |
| 128 |  | Recorrer el flujo de trabajo de cada caso de uso mediante las interfaces | 1d | 2013-05-20 | 2013-05-20 | 0d |
| 129 | 1.2.2.5 | **Validación del Cliente** | 1d | 2013-05-20 | 2013-05-20 | 0d |
| 130 |  | Organizar reunión con el cliente | 1d | 2013-05-20 | 2013-05-20 | 0d |
| 131 |  | Presentar casos de uso identificados y evaluar su validez | 1d | 2013-05-20 | 2013-05-20 | 0d |
| 132 |  | Validar CU esenciales recorriendo los diferentes escenarios mediante las interfaces gráficas | 1d | 2013-05-20 | 2013-05-20 | 0d |
| 133 |  | Registrar aportes y modificaciones hechas por el cliente | 1d | 2013-05-20 | 2013-05-20 | 0d |
| 134 | 1.2.3 | **Análisis** | 1d | 2013-05-20 | 2013-05-20 | 0d |
| 135 | 1.2.3.1 | **Realización de casos de uso esenciales** | 1d | 2013-05-20 | 2013-05-20 | 0d |
| 136 |  | Identificar clases de análisis participantes | 1d | 2013-05-20 | 2013-05-20 | 0d |
| 137 |  | Describir interacciones entre objetos de análisis | 1d | 2013-05-20 | 2013-05-20 | 0d |
| 138 |  | Documentar requisitos especiales | 1d | 2013-05-20 | 2013-05-20 | 0d |
| 139 |  | Estructurar diagrama de clases de analisis | 1d | 2013-05-20 | 2013-05-20 | 0d |
| 140 | 1.2.3.2 | **Estructurar artefactos de análisis en paquetes de análisis** | 1d | 2013-05-20 | 2013-05-20 | 0d |

| ID | WBS | Task | Duration | Start | Finish | Total float |
| --- | --- | --- | --- | --- | --- | --- |
| 141 |  | Identificar clases con alta cohesión | 1d | 2013-05-20 | 2013-05-20 | 0d |
| 142 |  | Estructurar las clases en paquetes de análisis | 1d | 2013-05-20 | 2013-05-20 | 0d |
| 143 |  | Identificar relaciones entre paquetes de análisis | 1d | 2013-05-20 | 2013-05-20 | 0d |
| 144 |  | Verificar los paquetes buscando alta cohesión entre sus componentes y bajo acoplamiento con otros paquetes | 1d | 2013-05-20 | 2013-05-20 | 0d |
| 145 | 1.2.4 | **Diseño** | 1d | 2013-05-20 | 2013-05-20 | 0d |
| 146 | 1.2.4.1 | **Diseñar la arquitectura** | 1d | 2013-05-20 | 2013-05-20 | 0d |
| 147 |  | Clasificar los Requisitos No Funcionales | 1d | 2013-05-20 | 2013-05-20 | 0d |
| 148 |  | Construir vista de despliegue de nodos | 1d | 2013-05-20 | 2013-05-20 | 0d |
| 149 |  | Construir vista de despliegue de hardware | 1d | 2013-05-20 | 2013-05-20 | 0d |
| 150 |  | Contruir vista de subsistemas e interfaces | 1d | 2013-05-20 | 2013-05-20 | 0d |
| 151 |  | Identificar Patrones de arquitectura a aplicar | 1d | 2013-05-20 | 2013-05-20 | 0d |
| 152 | 1.2.4.2 | **Realización de caso de uso - diseño (Solo los CU esenciales)** | 1d | 2013-05-20 | 2013-05-20 | 0d |
| 153 |  | Identificar clases de diseño participantes | 1d | 2013-05-20 | 2013-05-20 | 0d |
| 154 |  | Aplicar Patrones de Diseño | 1d | 2013-05-20 | 2013-05-20 | 0d |
| 155 |  | Describir interacciones entre objetos de diseño | 1d | 2013-05-20 | 2013-05-20 | 0d |
| 156 |  | Estructurar diagrama de clases de diseño | 1d | 2013-05-20 | 2013-05-20 | 0d |
| 157 | 1.2.4.3 | **Realizar Diagrama de Transición de estados** | 1d | 2013-05-20 | 2013-05-20 | 0d |
| 158 |  | Identificar Clases con transición de estados | 1d | 2013-05-20 | 2013-05-20 | 0d |
| 159 |  | Identificar estados de las clases | 1d | 2013-05-20 | 2013-05-20 | 0d |
| 160 |  | Identificar transiciones | 1d | 2013-05-20 | 2013-05-20 | 0d |
| 161 |  | Realizar diagrama de transición de estados | 1d | 2013-05-20 | 2013-05-20 | 0d |
| 162 | 1.2.4.4 | **Estructurar subsistemas de diseño** | 1d | 2013-05-20 | 2013-05-20 | 0d |
| 163 |  | Identificar subsistemas | 1d | 2013-05-20 | 2013-05-20 | 0d |
| 164 |  | Identificar interfaces entre subsistemas | 1d | 2013-05-20 | 2013-05-20 | 0d |
| 165 |  | Establecer relaciones entre subsistemas | 1d | 2013-05-20 | 2013-05-20 | 0d |
| 166 |  | Realizar modelo de diseño | 1d | 2013-05-20 | 2013-05-20 | 0d |
| 167 | 1.2.4.5 | **Mapeo del Modelo de Objetos a BDR** | 1d | 2013-05-20 | 2013-05-20 | 0d |
| 168 |  | Configurar la herramienta ORM para generar el mapeo automaticamente. | 1d | 2013-05-20 | 2013-05-20 | 0d |
| 169 |  | Codificar las clases utilizando las herramientas brindas por hibernate. | 1d | 2013-05-20 | 2013-05-20 | 0d |
| 170 |  | Realizar la compilación del proyecto para generar la estructura de la BD a través de la herramienta | 1d | 2013-05-20 | 2013-05-20 | 0d |
| 171 |  | Generar DER | 1d | 2013-05-20 | 2013-05-20 | 0d |
| 172 | 1.2.5 | **Implementación** | 1d | 2013-05-20 | 2013-05-20 | 0d |
| 173 | 1.2.5.1 | **Implementar la arquitectura** | 1d | 2013-05-20 | 2013-05-20 | 0d |
| 174 |  | Identificar componentes relevantes para la arquitectura | 1d | 2013-05-20 | 2013-05-20 | 0d |
| 175 |  | Asignar componentes a nodos | 1d | 2013-05-20 | 2013-05-20 | 0d |
| 176 | 1.2.5.2 | **Integrar sistema** | 1d | 2013-05-20 | 2013-05-20 | 0d |
| 177 |  | Definir construcciones a integrar | 1d | 2013-05-20 | 2013-05-20 | 0d |
| 178 |  | Comprobar compatibilidad de construcciones | 1d | 2013-05-20 | 2013-05-20 | 0d |
| 179 |  | Crear plan de integración de construcción | 1d | 2013-05-20 | 2013-05-20 | 0d |
| 180 |  | Integrar construcciones de sistema | 1d | 2013-05-20 | 2013-05-20 | 0d |
| 181 | 1.2.5.3 | **Implementar subsistema** | 1d | 2013-05-20 | 2013-05-20 | 0d |
| 182 |  | Definir objetivos y alcances del subsistema | 1d | 2013-05-20 | 2013-05-20 | 0d |
| 183 |  | Implementar subsistema en la construcción actual | 1d | 2013-05-20 | 2013-05-20 | 0d |
| 184 |  | Mantener los contenidos del subsistema | 1d | 2013-05-20 | 2013-05-20 | 0d |
| 185 | 1.2.5.4 | **Implementar clase** | 1d | 2013-05-20 | 2013-05-20 | 0d |
| 186 |  | Identificar clases de diseño a implementar | 1d | 2013-05-20 | 2013-05-20 | 0d |
| 187 |  | Generar código a partir de las clases de diseño | 1d | 2013-05-20 | 2013-05-20 | 0d |
| 188 |  | Implementar operaciones correspondientes en cada clase | 1d | 2013-05-20 | 2013-05-20 | 0d |
| 189 |  | Comprobar que las clases implementan las interfaces correspondientes | 1d | 2013-05-20 | 2013-05-20 | 0d |
| 190 | 1.2.5.5 | **Realizar pruebas de unidad** | 1d | 2013-05-20 | 2013-05-20 | 0d |
| 191 |  | Realizar plan de pruebas de unidad | 1d | 2013-05-20 | 2013-05-20 | 0d |
| 192 |  | Diseñar pruebas de caja negra, caja blanca y basadas en estados según corresponda | 1d | 2013-05-20 | 2013-05-20 | 0d |
| 193 |  | Realizar pruebas de unidad | 1d | 2013-05-20 | 2013-05-20 | 0d |
| 194 |  | Documentar resultados | 1d | 2013-05-20 | 2013-05-20 | 0d |
| 195 | 1.2.6 | **Prueba** | 1d | 2013-05-20 | 2013-05-20 | 0d |
| 196 | 1.2.6.1 | **Planificar pruebas** | 1d | 2013-05-20 | 2013-05-20 | 0d |
| 197 |  | Describir estrategia de prueba | 1d | 2013-05-20 | 2013-05-20 | 0d |
| 198 |  | Estimar los recursos para la prueba | 1d | 2013-05-20 | 2013-05-20 | 0d |
| 199 |  | Planificar el esfuerzo de la prueba | 1d | 2013-05-20 | 2013-05-20 | 0d |
| 200 | 1.2.6.2 | **Diseñar pruebas** | 1d | 2013-05-20 | 2013-05-20 | 0d |
| 201 |  | Identificar casos de prueba | 1d | 2013-05-20 | 2013-05-20 | 0d |
| 202 |  | Describir casos de prueba | 1d | 2013-05-20 | 2013-05-20 | 0d |
| 203 |  | Estructurar procedimiento de prueba | 1d | 2013-05-20 | 2013-05-20 | 0d |
| 204 | 1.2.6.3 | **Automatizar pruebas** | 1d | 2013-05-20 | 2013-05-20 | 0d |
| 205 |  | Identificar procedimientos de prueba automatizables | 1d | 2013-05-20 | 2013-05-20 | 0d |
| 206 |  | Crear componente de prueba | 1d | 2013-05-20 | 2013-05-20 | 0d |
| 207 | 1.2.6.4 | **Realizar pruebas** | 1d | 2013-05-20 | 2013-05-20 | 0d |
| 208 |  | Realizar pruebas de integración | 1d | 2013-05-20 | 2013-05-20 | 0d |
| 209 |  | Realizar pruebas de sistema | 1d | 2013-05-20 | 2013-05-20 | 0d |
| 210 |  | Registrar resultados de pruebas | 1d | 2013-05-20 | 2013-05-20 | 0d |

| ID | WBS | Task | Duration | Start | Finish | Total float |
| --- | --- | --- | --- | --- | --- | --- |
| 211 | 1.2.6.5 | **Evaluar pruebas** | 1d | 2013-05-20 | 2013-05-20 | 0d |
| 212 |  | Evaluar esfuerzos de prueba | 1d | 2013-05-20 | 2013-05-20 | 0d |
| 213 |  | Comparar resultados con los objetivos establecidos en el plan de pruebas | 1d | 2013-05-20 | 2013-05-20 | 0d |
| 214 |  | Establecer métricas y fiabilidad del sistema | 1d | 2013-05-20 | 2013-05-20 | 0d |
| 215 | 1.2.7 | **Distribución del SW** | 1d | 2013-05-20 | 2013-05-20 | 0d |
| 216 | 1.2.7.1 | **Planificar la distribución** | 1d | 2013-05-20 | 2013-05-20 | 0d |
| 217 |  | Definir fecha de instalación del sistema | 1d | 2013-05-20 | 2013-05-20 | 0d |
| 218 |  | Definir lugar y fecha de capacitaciones | 1d | 2013-05-20 | 2013-05-20 | 0d |
| 219 |  | Definir recursos asignados a la distribución | 1d | 2013-05-20 | 2013-05-20 | 0d |
| 220 | 1.2.7.2 | **Producir unidad de distribución** | 1d | 2013-05-20 | 2013-05-20 | 0d |
| 221 |  | Definir forma de entrega del SW | 1d | 2013-05-20 | 2013-05-20 | 0d |
| 222 |  | Identificar los artefactos necesarios para instalar y usar el sistema | 1d | 2013-05-20 | 2013-05-20 | 0d |
| 223 |  | Empaquetar el producto | 1d | 2013-05-20 | 2013-05-20 | 0d |
| 224 | 1.2.7.3 | **Efectuar capacitaciones** | 1d | 2013-05-20 | 2013-05-20 | 0d |
| 225 |  | Confeccionar Material de Soporte | 1d | 2013-05-20 | 2013-05-20 | 0d |
| 226 |  | Organizar capacitaciones | 1d | 2013-05-20 | 2013-05-20 | 0d |
| 227 |  | Realizar las capacitaciones correspondientes | 1d | 2013-05-20 | 2013-05-20 | 0d |
| 228 |  | Evaluar la capacitacion | 1d | 2013-05-20 | 2013-05-20 | 0d |
| 229 | 1.2.8 | **Nivel de Esfuerzo** | 1d | 2013-05-20 | 2013-05-20 | 0d |
| 230 | 1.2.8.1 | **Organización de reuniones** | 1d | 2013-05-20 | 2013-05-20 | 0d |
| 231 |  | Establecer lugar, fecha y hora de reunión | 1d | 2013-05-20 | 2013-05-20 | 0d |
| 232 |  | Asistir a la reunión | 1d | 2013-05-20 | 2013-05-20 | 0d |
| 233 |  | Documentar temas tratados | 1d | 2013-05-20 | 2013-05-20 | 0d |
| 234 | 1.2.8.2 | **Presentaciones** | 1d | 2013-05-20 | 2013-05-20 | 0d |
| 235 |  | Definir temas a presentar | 1d | 2013-05-20 | 2013-05-20 | 0d |
| 236 |  | Estructurar presentación | 1d | 2013-05-20 | 2013-05-20 | 0d |
| 237 |  | Llevar a cabo la presentación | 1d | 2013-05-20 | 2013-05-20 | 0d |
| 238 | 1.2.8.3 | **Investigaciones** | 1d | 2013-05-20 | 2013-05-20 | 0d |
| 239 |  | Definir temas a investigar | 1d | 2013-05-20 | 2013-05-20 | 0d |
| 240 |  | Buscar material relevante | 1d | 2013-05-20 | 2013-05-20 | 0d |
| 241 |  | Asimilar los conocimientos (teórica y prácticamente) | 1d | 2013-05-20 | 2013-05-20 | 0d |

## Version 2 (saved 2013-06-08)

Note of the change: Avances relacionados con la WBS y el cronograma de proyecto.

Last finish 2013-05-20 → 2013-06-29 (+40d).

Changed:

| ID | Task | Start | Finish | Duration | Total float | Predecessors | Other |
| --- | --- | --- | --- | --- | --- | --- | --- |
| 1 | **Proyecto: S.A.P.O.** | 2013-05-20 → 2013-04-03 (-47d) | 2013-05-20 → 2013-06-29 (+40d) | 1d → 25.75d |  |  |  |
| 2 | **Gestión de Proyecto** | 2013-05-20 → 2013-04-03 (-47d) | 2013-05-20 → 2013-05-22 (+2d) | 1d → 15d | 0d → 10.75d |  |  |
| 3 | **Alcance** | 2013-05-20 → 2013-04-03 (-47d) | 2013-05-20 → 2013-05-22 (+2d) | 1d → 15d | 0d → 10.75d |  |  |
| 4 | **Desarrollo idea de Proyecto** | 2013-05-20 → 2013-04-03 (-47d) | 2013-05-20 → 2013-04-24 (-26d) | 1d → 6.25d | 0d → 19.5d |  |  |
| 5 | Definir objetivos | 2013-05-20 → 2013-04-03 (-47d) | 2013-05-20 → 2013-04-03 (-47d) | 1d → 4h | 0d → 19.5d |  | resources none → Adm. de Proyecto; Analista Funcional I |
| 6 | Definir ámbito | 2013-05-20 → 2013-04-03 (-47d) | 2013-05-20 → 2013-04-10 (-40d) | 1d → 16h | 0d → 19.5d | none → 5 |  |
| 7 | Analizar y definir solución | 2013-05-20 → 2013-04-10 (-40d) | 2013-05-20 → 2013-04-24 (-26d) | 1d → 30h | 0d → 19.5d | none → 6 |  |
| 8 | **Definición alcance de proyecto** | 2013-05-20 → 2013-04-03 (-47d) | 2013-05-20 → 2013-04-06 (-44d) | 1d → 1.75d | 0d → 24d |  |  |
| 9 | Identificar supuestos y restricciones | 2013-05-20 → 2013-04-03 (-47d) | 2013-05-20 → 2013-04-03 (-47d) | 1d → 4h | 0d → 24.75d |  |  |
| 10 | Identificar entregables de trabajo | 2013-05-20 → 2013-04-03 (-47d) | 2013-05-20 → 2013-04-06 (-44d) | 1d → 10h | 0d → 24d |  |  |
| 11 | Definir roles participantes | 2013-05-20 → 2013-04-03 (-47d) | 2013-05-20 → 2013-04-03 (-47d) | 1d → 4h | 0d → 24.75d |  |  |
| 12 | Elaborar Project Charter | 2013-05-20 → 2013-04-06 (-44d) | 2013-05-20 → 2013-04-06 (-44d) | 1d → 4h | 0d → 24d | none → 9, 10, 11 |  |
| 13 | Elaborar Scope Statement | 2013-05-20 → 2013-04-06 (-44d) | 2013-05-20 → 2013-04-06 (-44d) | 1d → 4h | 0d → 24d | none → 9, 10, 11 |  |
| 14 | **Desglose de trabajo (WBS)** | 2013-05-20 → 2013-04-03 (-47d) | 2013-05-20 → 2013-05-22 (+2d) | 1d → 15d | 0d → 10.75d |  |  |
| 15 | Identificar componentes y estructurar la WBS | 2013-05-20 → 2013-04-03 (-47d) | 2013-05-20 → 2013-04-24 (-26d) | 1d → 50h | 0d → 10.75d |  |  |
| 16 | Elaborar diccionario de la WBS | 2013-05-20 → 2013-04-24 (-26d) | 2013-05-20 → 2013-05-18 (-2d) | 1d → 60h | 0d → 10.75d | none → 15 |  |
| 17 | Realizar listado de actividades | 2013-05-20 → 2013-05-18 (-2d) | 2013-05-20 → 2013-05-22 (+2d) | 1d → 10h | 0d → 10.75d | none → 16 |  |
| 18 | **Planificar Iteraciones del proyecto** | 2013-05-20 → 2013-04-03 (-47d) | 2013-05-20 → 2013-04-17 (-33d) | 1d → 5d | 0d → 20.75d |  |  |
| 19 | Armar lista priorizada de requerimientos con el cliente | 2013-05-20 → 2013-04-03 (-47d) | 2013-05-20 → 2013-04-06 (-44d) | 1d → 10h | 0d → 20.75d |  |  |
| 20 | Definir requerimientos a incluir en cada iteración | 2013-05-20 → 2013-04-06 (-44d) | 2013-05-20 → 2013-04-13 (-37d) | 1d → 15h | 0d → 20.75d | none → 19 |  |
| 21 | Asignar recursos para cada iteración | 2013-05-20 → 2013-04-13 (-37d) | 2013-05-20 → 2013-04-17 (-33d) | 1d → 10h | 0d → 20.75d | none → 20 |  |
| 22 | Documentar planificación de las iteraciones | 2013-05-20 → 2013-04-17 (-33d) | 2013-05-20 → 2013-04-17 (-33d) | 1d → 5h | 0d → 20.75d | none → 21 |  |
| 23 | **Tiempo** | 2013-05-20 → 2013-04-03 (-47d) | 2013-05-20 → 2013-04-13 (-37d) | 1d → 3.75d | 0d → 22d |  |  |
| 24 | **Estimación de recursos y duración actividades** | 2013-05-20 → 2013-04-03 (-47d) | 2013-05-20 → 2013-04-06 (-44d) | 1d → 2d | 0d → 23.75d |  |  |
| 25 | Estimar duración actividades | 2013-05-20 → 2013-04-03 (-47d) | 2013-05-20 → 2013-04-06 (-44d) | 1d → 10h | 0d → 23.75d |  |  |
| 26 | Estimar recursos necesarios | 2013-05-20 → 2013-04-03 (-47d) | 2013-05-20 → 2013-04-03 (-47d) | 1d → 5h | 0d → 24.38d |  |  |
| 27 | Análisis de estimaciones | 2013-05-20 → 2013-04-06 (-44d) | 2013-05-20 → 2013-04-06 (-44d) | 1d → 6h | 0d → 23.75d | none → 26, 25 |  |
| 28 | **Desarrollo del Cronograma** | 2013-05-20 → 2013-04-03 (-47d) | 2013-05-20 → 2013-04-13 (-37d) | 1d → 3.75d | 0d → 22d |  |  |
| 29 | Identificar hitos del proyecto | 2013-05-20 → 2013-04-03 (-47d) | 2013-05-20 → 2013-04-03 (-47d) | 1d → 4h | 0d → 24d |  |  |
| 30 | Identificar actividades críticas | 2013-05-20 → 2013-04-03 (-47d) | 2013-05-20 → 2013-04-06 (-44d) | 1d → 10h | 0d → 22d |  |  |
| 31 | Analizar secuenciamiento de actividades | 2013-05-20 → 2013-04-06 (-44d) | 2013-05-20 → 2013-04-10 (-40d) | 1d → 10h | 0d → 22d | none → 30 |  |
| 32 | Definir cronograma | 2013-05-20 → 2013-04-10 (-40d) | 2013-05-20 → 2013-04-13 (-37d) | 1d → 10h | 0d → 22d | none → 29, 31 |  |
| 33 | **Control del Cronograma** | 2013-05-20 → 2013-04-03 (-47d) | 2013-05-20 → 2013-04-10 (-40d) | 1d → 3d | 0d → 22.75d |  |  |
| 34 | Determinar estado actual | 2013-05-20 → 2013-04-03 (-47d) | 2013-05-20 → 2013-04-06 (-44d) | 1d → 10h | 0d → 22.75d |  |  |
| 35 | Analizar factores que generan cambios | 2013-05-20 → 2013-04-06 (-44d) | 2013-05-20 → 2013-04-10 (-40d) | 1d → 10h | 0d → 22.75d | none → 34 |  |
| 36 | Gestionar cambios en el cronograma | 2013-05-20 → 2013-04-10 (-40d) | 2013-05-20 → 2013-04-10 (-40d) | 1d → 4h | 0d → 22.75d | none → 35 |  |
| 37 | **Riesgos** | 2013-05-20 → 2013-04-03 (-47d) | 2013-05-20 → 2013-04-13 (-37d) | 1d → 3.75d | 0d → 22d |  |  |
| 38 | **Planificación de la gestión de riesgos** | 2013-05-20 → 2013-04-03 (-47d) | 2013-05-20 → 2013-04-06 (-44d) | 1d → 1.88d | 0d → 23.88d |  |  |
| 39 | Definir metodologías | 2013-05-20 → 2013-04-03 (-47d) | 2013-05-20 → 2013-04-03 (-47d) | 1d → 5h | 0d → 25.12d |  |  |
| 40 | Definir roles y responsabilidades | 2013-05-20 → 2013-04-03 (-47d) | 2013-05-20 → 2013-04-06 (-44d) | 1d → 10h | 0d → 23.88d |  |  |
| 41 | Asignar recursos | 2013-05-20 → 2013-04-06 (-44d) | 2013-05-20 → 2013-04-06 (-44d) | 1d → 5h | 0d → 23.88d | none → 40 |  |
| 42 | Establecer frecuencia de supervisión y control | 2013-05-20 → 2013-04-03 (-47d) | 2013-05-20 → 2013-04-03 (-47d) | 1d → 2h | 0d → 25.5d |  |  |
| 43 | **Identificación y análisis de riesgos** | 2013-05-20 → 2013-04-03 (-47d) | 2013-05-20 → 2013-04-13 (-37d) | 1d → 3.75d | 0d → 22d |  |  |
| 44 | Listar riesgos del proyecto | 2013-05-20 → 2013-04-03 (-47d) | 2013-05-20 → 2013-04-06 (-44d) | 1d → 10h | 0d → 22d |  |  |
| 45 | Analizar probabilidad e impacto de los riesgos | 2013-05-20 → 2013-04-06 (-44d) | 2013-05-20 → 2013-04-13 (-37d) | 1d → 15h | 0d → 22d | none → 44 |  |
| 46 | Elaborar matriz de probabilidad e impacto | 2013-05-20 → 2013-04-13 (-37d) | 2013-05-20 → 2013-04-13 (-37d) | 1d → 5h | 0d → 22d | none → 45 |  |
| 47 | **Selección de riesgos y planes de respuesta** | 2013-05-20 → 2013-04-03 (-47d) | 2013-05-20 → 2013-04-10 (-40d) | 1d → 2.12d | 0d → 23.62d |  |  |
| 48 | Elegir criterio de selección | 2013-05-20 → 2013-04-03 (-47d) | 2013-05-20 → 2013-04-03 (-47d) | 1d → 2h | 0d → 23.62d |  |  |
| 49 | Seleccionar riesgos a contemplar | 2013-05-20 → 2013-04-03 (-47d) | 2013-05-20 → 2013-04-03 (-47d) | 1d → 5h | 0d → 23.62d | none → 48 |  |
| 50 | Definir estrategia de respuesta | 2013-05-20 → 2013-04-03 (-47d) | 2013-05-20 → 2013-04-06 (-44d) | 1d → 2h | 0d → 23.62d | none → 49 |  |
| 51 | Planificar estrategias | 2013-05-20 → 2013-04-06 (-44d) | 2013-05-20 → 2013-04-06 (-44d) | 1d → 5h | 0d → 23.62d | none → 50 |  |
| 52 | Documentar resultados | 2013-05-20 → 2013-04-06 (-44d) | 2013-05-20 → 2013-04-10 (-40d) | 1d → 3h | 0d → 23.62d | none → 51 |  |
| 53 | **Supervisión y control** | 2013-05-20 → 2013-04-03 (-47d) | 2013-05-20 → 2013-04-10 (-40d) | 1d → 2.5d | 0d → 23.25d |  |  |
| 54 | Supervisar y reevaluar los riesgos | 2013-05-20 → 2013-04-03 (-47d) | 2013-05-20 → 2013-04-06 (-44d) | 1d → 15h | 0d → 23.25d |  |  |
| 55 | Identificar nuevos riesgos | 2013-05-20 → 2013-04-03 (-47d) | 2013-05-20 → 2013-04-06 (-44d) | 1d → 15h | 0d → 23.25d |  |  |
| 56 | Documentar cambios en el plan | 2013-05-20 → 2013-04-06 (-44d) | 2013-05-20 → 2013-04-10 (-40d) | 1d → 5h | 0d → 23.25d | none → 54, 55 |  |
| 57 | **Gestión de recursos humanos** | 2013-05-20 → 2013-04-03 (-47d) | 2013-05-20 → 2013-05-11 (-9d) | 1d → 11.25d | 0d → 14.5d |  |  |
| 58 | **Planificación** | 2013-05-20 → 2013-04-03 (-47d) | 2013-05-20 → 2013-04-03 (-47d) | 1d → 0.62d | 0d → 25.12d |  |  |
| 59 | Definir roles y responsabilidades | 2013-05-20 → 2013-04-03 (-47d) | 2013-05-20 → 2013-04-03 (-47d) | 1d → 5h | 0d → 25.12d |  |  |
| 60 | Definir calendario de recursos | 2013-05-20 → 2013-04-03 (-47d) | 2013-05-20 → 2013-04-03 (-47d) | 1d → 5h | 0d → 25.12d |  |  |
| 61 | Elaborar plantillas de documentación | 2013-05-20 → 2013-04-03 (-47d) | 2013-05-20 → 2013-04-03 (-47d) | 1d → 5h | 0d → 25.12d |  |  |
| 62 | **Gestión de reuniones** | 2013-05-20 → 2013-04-03 (-47d) | 2013-05-20 → 2013-05-11 (-9d) | 1d → 11.25d | 0d → 14.5d |  |  |
| 63 | Definir cheklist de temas a tratar | 2013-05-20 → 2013-04-03 (-47d) | 2013-05-20 → 2013-04-10 (-40d) | 1d → 20h | 0d → 14.5d |  |  |
| 64 | Establecer lugar, fecha y hora | 2013-05-20 → 2013-04-03 (-47d) | 2013-05-20 → 2013-04-03 (-47d) | 1d → 5h | 0d → 16.38d |  |  |
| 65 | Concretar reunión | 2013-05-20 → 2013-04-10 (-40d) | 2013-05-20 → 2013-05-01 (-19d) | 1d → 50h | 0d → 14.5d | none → 63, 64 |  |
| 66 | Completar minuta de reunión semanal | 2013-05-20 → 2013-05-01 (-19d) | 2013-05-20 → 2013-05-11 (-9d) | 1d → 20h | 0d → 14.5d | none → 65 |  |
| 67 | **Producto** | 2013-05-20 → 2013-04-03 (-47d) | 2013-05-20 → 2013-06-29 (+40d) | 1d → 25.75d |  |  |  |
| 68 | **Relevamiento** | 2013-05-20 → 2013-04-03 (-47d) | 2013-05-20 → 2013-06-29 (+40d) | 1d → 25.75d |  |  |  |
| 69 | **Diseñar instrumento de relevamiento** | 2013-05-20 → 2013-04-03 (-47d) | 2013-05-20 → 2013-05-18 (-2d) | 1d → 13.12d | 0d → 12.62d |  |  |
| 70 | Definir ámbito de relevamiento | 2013-05-20 → 2013-04-03 (-47d) | 2013-05-20 → 2013-04-06 (-44d) | 1d → 10h | 0d → 23.25d |  |  |

| ID | Task | Start | Finish | Duration | Total float | Predecessors | Other |
| --- | --- | --- | --- | --- | --- | --- | --- |
| 71 | Seleccionar la herramienta de relevamiento apropiada | 2013-05-20 → 2013-04-03 (-47d) | 2013-05-20 → 2013-04-10 (-40d) | 1d → 20h | 0d → 12.62d |  |  |
| 72 | Seleccionar el medio de relevamiento | 2013-05-20 → 2013-04-10 (-40d) | 2013-05-20 → 2013-04-13 (-37d) | 1d → 10h | 0d → 22d | none → 70, 71 |  |
| 73 | Elaborar listado de preguntas tentativas | 2013-05-20 → 2013-04-10 (-40d) | 2013-05-20 → 2013-04-20 (-30d) | 1d → 25h | 0d → 12.62d | none → 71 |  |
| 74 | Seleccionar las preguntas a realizar | 2013-05-20 → 2013-04-20 (-30d) | 2013-05-20 → 2013-05-01 (-19d) | 1d → 20h | 0d → 12.62d | none → 73 |  |
| 75 | Diseñar y confeccionar la herramienta | 2013-05-20 → 2013-05-01 (-19d) | 2013-05-20 → 2013-05-11 (-9d) | 1d → 30h | 0d → 12.62d | none → 74 |  |
| 76 | Estimar cantidad de formularios y emitir los mismos | 2013-05-20 → 2013-05-11 (-9d) | 2013-05-20 → 2013-05-18 (-2d) | 1d → 10h | 0d → 12.62d | none → 75 |  |
| 77 | **Relevar información** | 2013-05-20 → 2013-04-03 (-47d) | 2013-05-20 → 2013-04-27 (-23d) | 1d → 7.5d | 0d → 18.25d |  |  |
| 78 | Analizar el medio de relevamiento | 2013-05-20 → 2013-04-03 (-47d) | 2013-05-20 → 2013-04-03 (-47d) | 1d → 5h | 0d → 18.25d |  |  |
| 79 | Determinar fecha y hora de relevamiento. En caso de ser necesario, concertar cita con stakeholder | 2013-05-20 → 2013-04-03 (-47d) | 2013-05-20 → 2013-04-06 (-44d) | 1d → 10h | 0d → 18.25d | none → 78 |  |
| 80 | Preparar el relevamiento | 2013-05-20 → 2013-04-06 (-44d) | 2013-05-20 → 2013-04-13 (-37d) | 1d → 10h | 0d → 18.25d | none → 79 |  |
| 81 | Realizar relevamiento mediante la herramienta | 2013-05-20 → 2013-04-13 (-37d) | 2013-05-20 → 2013-04-24 (-26d) | 1d → 30h | 0d → 18.25d | none → 80 |  |
| 82 | Concluir el relevamiento realizado | 2013-05-20 → 2013-04-24 (-26d) | 2013-05-20 → 2013-04-27 (-23d) | 1d → 5h | 0d → 18.25d | none → 81 |  |
| 83 | **Analizar Información** | 2013-05-20 → 2013-04-03 (-47d) | 2013-05-20 → 2013-04-24 (-26d) | 1d → 6.88d | 0d → 18.88d |  |  |
| 84 | Organizar información recabada de acuerdo a criterios que simplifiquen su análisis | 2013-05-20 → 2013-04-03 (-47d) | 2013-05-20 → 2013-04-03 (-47d) | 1d → 5h | 0d → 18.88d |  |  |
| 85 | Analizar la información | 2013-05-20 → 2013-04-03 (-47d) | 2013-05-20 → 2013-04-06 (-44d) | 1d → 10h | 0d → 18.88d | none → 84 |  |
| 86 | Debatir grupalmente los resultados del análisis para comprender el funcionamiento de la organización | 2013-05-20 → 2013-04-06 (-44d) | 2013-05-20 → 2013-04-17 (-33d) | 1d → 20h | 0d → 18.88d | none → 85 |  |
| 87 | Elaborar conclusión de relevamiento destacando nuevos puntos a investigar | 2013-05-20 → 2013-04-17 (-33d) | 2013-05-20 → 2013-04-24 (-26d) | 1d → 20h | 0d → 18.88d | none → 86 |  |
| 88 | **Documentar el proceso de negocio** | 2013-05-20 → 2013-04-03 (-47d) | 2013-05-20 → 2013-06-29 (+40d) | 1d → 25.75d |  |  |  |
| 89 | Identificar y discutir grupalmente los diferentes procesos de negocio presentes en la organización | 2013-05-20 → 2013-04-03 (-47d) | 2013-05-20 → 2013-04-03 (-47d) | 1d → 5h |  |  |  |
| 90 | Seleccionar los procesos que serán afectados por el sistema de información | 2013-05-20 → 2013-04-03 (-47d) | 2013-05-20 → 2013-04-06 (-44d) | 1d → 6h |  | none → 89 |  |
| 91 | Confeccionar mapa global de los procesos de entorno | 2013-05-20 → 2013-04-06 (-44d) | 2013-05-20 → 2013-04-10 (-40d) | 1d → 10h | 0d → 23.12d | none → 90 |  |
| 92 | Describir los procesos identificados a los que da soporte el sistema de información | 2013-05-20 → 2013-04-06 (-44d) | 2013-05-20 → 2013-04-13 (-37d) | 1d → 20h |  | none → 90 |  |
| 93 | Identificar los problemas de los procesos actuales | 2013-05-20 → 2013-04-13 (-37d) | 2013-05-20 → 2013-04-20 (-30d) | 1d → 10h |  | none → 92 |  |
| 94 | Establecer puntos de mejora | 2013-05-20 → 2013-04-20 (-30d) | 2013-05-20 → 2013-04-20 (-30d) | 1d → 5h |  | none → 93, 92 |  |
| 95 | Desarrollar una propuesta de mejora que contemple los problemas y los puntos de mejora identificados | 2013-05-20 → 2013-04-20 (-30d) | 2013-05-20 → 2013-06-29 (+40d) | 1d → 20d |  | none → 94 |  |
| 96 | **Aceptación del Cliente** | 2013-05-20 → 2013-04-03 (-47d) | 2013-05-20 → 2013-04-06 (-44d) | 1d → 1.38d | 0d → 24.38d |  |  |
| 97 | Enviar la documentación del proceso de negocio al cliente | 2013-05-20 → 2013-04-03 (-47d) | 2013-05-20 → 2013-04-03 (-47d) | 1d → 1h | 0d → 24.38d |  |  |
| 98 | Evaluar retroalimentación del cliente | 2013-05-20 → 2013-04-03 (-47d) | 2013-05-20 → 2013-04-03 (-47d) | 1d → 4h | 0d → 24.38d | none → 97 | was named Evaluar retroalementación del cliente |
| 99 | Actualizar documentación | 2013-05-20 → 2013-04-03 (-47d) | 2013-05-20 → 2013-04-03 (-47d) | 1d → 2h | 0d → 24.38d | none → 98 |  |
| 100 | Registrar aprobacion del cliente | 2013-05-20 → 2013-04-03 (-47d) | 2013-05-20 → 2013-04-06 (-44d) | 1d → 0.5d | 0d → 24.38d | none → 99 |  |
| 101 | **Requerimiento** | 2013-05-20 → 2013-04-03 (-47d) | 2013-05-20 → 2013-06-15 (+26d) | 1d → 22d | 0d → 3.75d |  |  |
| 102 | **Especificar requerimientos del sistema** | 2013-05-20 → 2013-04-03 (-47d) | 2013-05-20 → 2013-04-20 (-30d) | 1d → 5.62d | 0d → 20.12d |  |  |
| 103 | Identificar requerimientos globales de la organización | 2013-05-20 → 2013-04-03 (-47d) | 2013-05-20 → 2013-04-03 (-47d) | 1d → 5h | 0d → 20.12d |  |  |
| 104 | Identificar requerimientos detallados de la organización | 2013-05-20 → 2013-04-03 (-47d) | 2013-05-20 → 2013-04-13 (-37d) | 1d → 20h | 0d → 20.12d | none → 103 |  |
| 105 | Realizar descripción de requerimientos funcionales | 2013-05-20 → 2013-04-13 (-37d) | 2013-05-20 → 2013-04-20 (-30d) | 1d → 20h | 0d → 20.12d | none → 104 |  |
| 106 | Realizar descripción de requerimientos no funcionales | 2013-05-20 → 2013-04-13 (-37d) | 2013-05-20 → 2013-04-17 (-33d) | 1d → 10h | 0d → 21.38d | none → 104 |  |
| 107 | **Estructurar modelo de casos de uso del sistema** | 2013-05-20 → 2013-04-03 (-47d) | 2013-05-20 → 2013-06-15 (+26d) | 1d → 22d | 0d → 3.75d |  |  |
| 108 | Identificar y describir actores | 2013-05-20 → 2013-04-03 (-47d) | 2013-05-20 → 2013-04-03 (-47d) | 1d → 4h | 0d → 3.75d |  |  |
| 109 | Identificar relaciones entre los actores | 2013-05-20 → 2013-04-03 (-47d) | 2013-05-20 → 2013-04-03 (-47d) | 1d → 2h | 0d → 3.75d | none → 108 |  |
| 110 | Identificar Casos de Uso del sistema | 2013-05-20 → 2013-04-03 (-47d) | 2013-05-20 → 2013-04-17 (-33d) | 1d → 30h | 0d → 3.75d | none → 109 |  |
| 111 | Describir objetivos de casos de uso del sistema | 2013-05-20 → 2013-04-17 (-33d) | 2013-05-20 → 2013-05-04 (-16d) | 1d → 40h | 0d → 3.75d | none → 110 |  |
| 112 | Describir trazo grueso de casos de uso del sistema | 2013-05-20 → 2013-04-17 (-33d) | 2013-05-20 → 2013-04-20 (-30d) | 1d → 7h | 0d → 17.88d | none → 110 |  |
| 113 | Describir trazo fino de CU esenciales del sistema | 2013-05-20 → 2013-04-17 (-33d) | 2013-05-20 → 2013-05-08 (-12d) | 1d → 50h | 0d → 15d | none → 110 |  |
| 114 | Identificar relaciones entre casos de uso | 2013-05-20 → 2013-05-04 (-16d) | 2013-05-20 → 2013-06-15 (+26d) | 1d → 100h | 0d → 3.75d | none → 111 |  |
| 115 | Construir diagramas de caso de uso del sistema | 2013-05-20 → 2013-04-20 (-30d) | 2013-05-20 → 2013-04-24 (-26d) | 1d → 10h | 0d → 17.88d | none → 112 |  |
| 116 | Confeccionar documento de especificación de requerimiento del software | 2013-05-20 → 2013-04-24 (-26d) | 2013-05-20 → 2013-04-27 (-23d) | 1d → 10h | 0d → 17.88d | none → 115 |  |
| 117 | **Realizar modelo de objetos del dominio del problema(MODP)** | 2013-05-20 → 2013-04-03 (-47d) | 2013-05-20 → 2013-05-01 (-19d) | 1d → 8.75d | 0d → 17d |  |  |
| 118 | Identificar clases del dominio | 2013-05-20 → 2013-04-03 (-47d) | 2013-05-20 → 2013-04-06 (-44d) | 1d → 15h | 0d → 17d |  |  |
| 119 | Identificar atributos y métodos de clase | 2013-05-20 → 2013-04-06 (-44d) | 2013-05-20 → 2013-04-20 (-30d) | 1d → 30h | 0d → 17d | none → 118 |  |
| 120 | Identificar relaciones entre clases | 2013-05-20 → 2013-04-20 (-30d) | 2013-05-20 → 2013-04-24 (-26d) | 1d → 10h | 0d → 17d | none → 119 |  |
| 121 | Confecionar el diagrama de clases | 2013-05-20 → 2013-04-24 (-26d) | 2013-05-20 → 2013-05-01 (-19d) | 1d → 15h | 0d → 17d | none → 120 |  |
| 122 | **Construir prototipo de interfaz** | 2013-05-20 → 2013-04-03 (-47d) | 2013-05-20 → 2013-04-20 (-30d) | 1d → 6d | 0d → 19.75d |  |  |
| 123 | Definir un template para la interfaz y prototipos de interfaz | 2013-05-20 → 2013-04-03 (-47d) | 2013-05-20 → 2013-04-06 (-44d) | 1d → 15h | 0d → 19.75d |  | was named Definir un templaate para la interfaz y prototipos de interfaz |
| 124 | Identificar los casos de uso del sistema que requieren prototipos de interfaz | 2013-05-20 → 2013-04-06 (-44d) | 2013-05-20 → 2013-04-10 (-40d) | 1d → 2h | 0d → 19.75d | none → 123 |  |
| 125 | Definir los datos necesarios para cada interfaz | 2013-05-20 → 2013-04-10 (-40d) | 2013-05-20 → 2013-04-10 (-40d) | 1d → 6h | 0d → 19.75d | none → 124 |  |
| 126 | Diseñar interfaces de cada caso de uso identificado | 2013-05-20 → 2013-04-10 (-40d) | 2013-05-20 → 2013-04-20 (-30d) | 1d → 20h | 0d → 19.75d | none → 125 |  |
| 127 | Definir y diseñar navegabilidad de las interfaces | 2013-05-20 → 2013-04-20 (-30d) | 2013-05-20 → 2013-04-20 (-30d) | 1d → 3h | 0d → 19.75d | none → 126 |  |
| 128 | Recorrer el flujo de trabajo de cada caso de uso mediante las interfaces | 2013-05-20 → 2013-04-20 (-30d) | 2013-05-20 → 2013-04-20 (-30d) | 1d → 2h | 0d → 19.75d | none → 127 |  |
| 129 | **Validación del Cliente** | 2013-05-20 → 2013-04-03 (-47d) | 2013-05-20 → 2013-04-17 (-33d) | 1d → 4.75d | 0d → 21d |  |  |
| 130 | Organizar reunión con el cliente | 2013-05-20 → 2013-04-03 (-47d) | 2013-05-20 → 2013-04-03 (-47d) | 1d → 6h | 0d → 21d |  |  |
| 131 | Presentar casos de uso identificados y evaluar su validez | 2013-05-20 → 2013-04-03 (-47d) | 2013-05-20 → 2013-04-13 (-37d) | 1d → 20h | 0d → 21d | none → 130 |  |
| 132 | Validar CU esenciales recorriendo los diferentes escenarios mediante las interfaces gráficas | 2013-05-20 → 2013-04-13 (-37d) | 2013-05-20 → 2013-04-17 (-33d) | 1d → 10h | 0d → 21d | none → 131 |  |
| 133 | Registrar aportes y modificaciones hechas por el cliente | 2013-05-20 → 2013-04-17 (-33d) | 2013-05-20 → 2013-04-17 (-33d) | 1d → 2h | 0d → 21d | none → 132 |  |
| 134 | **Análisis** | 2013-05-20 → 2013-04-03 (-47d) | 2013-05-20 → 2013-04-03 (-47d) |  | 0d → 24.75d |  |  |
| 135 | **Realización de casos de uso esenciales** | 2013-05-20 → 2013-04-03 (-47d) | 2013-05-20 → 2013-04-03 (-47d) |  | 0d → 24.75d |  |  |
| 136 | Identificar clases de análisis participantes | 2013-05-20 → 2013-04-03 (-47d) | 2013-05-20 → 2013-04-03 (-47d) |  | 0d → 24.75d |  |  |
| 137 | Describir interacciones entre objetos de análisis | 2013-05-20 → 2013-04-03 (-47d) | 2013-05-20 → 2013-04-03 (-47d) |  | 0d → 24.75d |  |  |
| 138 | Documentar requisitos especiales | 2013-05-20 → 2013-04-03 (-47d) | 2013-05-20 → 2013-04-03 (-47d) |  | 0d → 24.75d |  |  |
| 139 | Estructurar diagrama de clases de analisis | 2013-05-20 → 2013-04-03 (-47d) | 2013-05-20 → 2013-04-03 (-47d) |  | 0d → 24.75d |  |  |
| 140 | **Estructurar artefactos de análisis en paquetes de análisis** | 2013-05-20 → 2013-04-03 (-47d) | 2013-05-20 → 2013-04-03 (-47d) |  | 0d → 24.75d |  |  |

| ID | Task | Start | Finish | Total float |
| --- | --- | --- | --- | --- |
| 141 | Identificar clases con alta cohesión | 2013-05-20 → 2013-04-03 (-47d) | 2013-05-20 → 2013-04-03 (-47d) | 0d → 24.75d |
| 142 | Estructurar las clases en paquetes de análisis | 2013-05-20 → 2013-04-03 (-47d) | 2013-05-20 → 2013-04-03 (-47d) | 0d → 24.75d |
| 143 | Identificar relaciones entre paquetes de análisis | 2013-05-20 → 2013-04-03 (-47d) | 2013-05-20 → 2013-04-03 (-47d) | 0d → 24.75d |
| 144 | Verificar los paquetes buscando alta cohesión entre sus componentes y bajo acoplamiento con otros paquetes | 2013-05-20 → 2013-04-03 (-47d) | 2013-05-20 → 2013-04-03 (-47d) | 0d → 24.75d |
| 145 | **Diseño** | 2013-05-20 → 2013-04-03 (-47d) | 2013-05-20 → 2013-04-03 (-47d) | 0d → 24.75d |
| 146 | **Diseñar la arquitectura** | 2013-05-20 → 2013-04-03 (-47d) | 2013-05-20 → 2013-04-03 (-47d) | 0d → 24.75d |
| 147 | Clasificar los Requisitos No Funcionales | 2013-05-20 → 2013-04-03 (-47d) | 2013-05-20 → 2013-04-03 (-47d) | 0d → 24.75d |
| 148 | Construir vista de despliegue de nodos | 2013-05-20 → 2013-04-03 (-47d) | 2013-05-20 → 2013-04-03 (-47d) | 0d → 24.75d |
| 149 | Construir vista de despliegue de hardware | 2013-05-20 → 2013-04-03 (-47d) | 2013-05-20 → 2013-04-03 (-47d) | 0d → 24.75d |
| 150 | Contruir vista de subsistemas e interfaces | 2013-05-20 → 2013-04-03 (-47d) | 2013-05-20 → 2013-04-03 (-47d) | 0d → 24.75d |
| 151 | Identificar Patrones de arquitectura a aplicar | 2013-05-20 → 2013-04-03 (-47d) | 2013-05-20 → 2013-04-03 (-47d) | 0d → 24.75d |
| 152 | **Realización de caso de uso - diseño (Solo los CU esenciales)** | 2013-05-20 → 2013-04-03 (-47d) | 2013-05-20 → 2013-04-03 (-47d) | 0d → 24.75d |
| 153 | Identificar clases de diseño participantes | 2013-05-20 → 2013-04-03 (-47d) | 2013-05-20 → 2013-04-03 (-47d) | 0d → 24.75d |
| 154 | Aplicar Patrones de Diseño | 2013-05-20 → 2013-04-03 (-47d) | 2013-05-20 → 2013-04-03 (-47d) | 0d → 24.75d |
| 155 | Describir interacciones entre objetos de diseño | 2013-05-20 → 2013-04-03 (-47d) | 2013-05-20 → 2013-04-03 (-47d) | 0d → 24.75d |
| 156 | Estructurar diagrama de clases de diseño | 2013-05-20 → 2013-04-03 (-47d) | 2013-05-20 → 2013-04-03 (-47d) | 0d → 24.75d |
| 157 | **Realizar Diagrama de Transición de estados** | 2013-05-20 → 2013-04-03 (-47d) | 2013-05-20 → 2013-04-03 (-47d) | 0d → 24.75d |
| 158 | Identificar Clases con transición de estados | 2013-05-20 → 2013-04-03 (-47d) | 2013-05-20 → 2013-04-03 (-47d) | 0d → 24.75d |
| 159 | Identificar estados de las clases | 2013-05-20 → 2013-04-03 (-47d) | 2013-05-20 → 2013-04-03 (-47d) | 0d → 24.75d |
| 160 | Identificar transiciones | 2013-05-20 → 2013-04-03 (-47d) | 2013-05-20 → 2013-04-03 (-47d) | 0d → 24.75d |
| 161 | Realizar diagrama de transición de estados | 2013-05-20 → 2013-04-03 (-47d) | 2013-05-20 → 2013-04-03 (-47d) | 0d → 24.75d |
| 162 | **Estructurar subsistemas de diseño** | 2013-05-20 → 2013-04-03 (-47d) | 2013-05-20 → 2013-04-03 (-47d) | 0d → 24.75d |
| 163 | Identificar subsistemas | 2013-05-20 → 2013-04-03 (-47d) | 2013-05-20 → 2013-04-03 (-47d) | 0d → 24.75d |
| 164 | Identificar interfaces entre subsistemas | 2013-05-20 → 2013-04-03 (-47d) | 2013-05-20 → 2013-04-03 (-47d) | 0d → 24.75d |
| 165 | Establecer relaciones entre subsistemas | 2013-05-20 → 2013-04-03 (-47d) | 2013-05-20 → 2013-04-03 (-47d) | 0d → 24.75d |
| 166 | Realizar modelo de diseño | 2013-05-20 → 2013-04-03 (-47d) | 2013-05-20 → 2013-04-03 (-47d) | 0d → 24.75d |
| 167 | **Mapeo del Modelo de Objetos a BDR** | 2013-05-20 → 2013-04-03 (-47d) | 2013-05-20 → 2013-04-03 (-47d) | 0d → 24.75d |
| 168 | Configurar la herramienta ORM para generar el mapeo automaticamente. | 2013-05-20 → 2013-04-03 (-47d) | 2013-05-20 → 2013-04-03 (-47d) | 0d → 24.75d |
| 169 | Codificar las clases utilizando las herramientas brindas por hibernate. | 2013-05-20 → 2013-04-03 (-47d) | 2013-05-20 → 2013-04-03 (-47d) | 0d → 24.75d |
| 170 | Realizar la compilación del proyecto para generar la estructura de la BD a través de la herramienta | 2013-05-20 → 2013-04-03 (-47d) | 2013-05-20 → 2013-04-03 (-47d) | 0d → 24.75d |
| 171 | Generar DER | 2013-05-20 → 2013-04-03 (-47d) | 2013-05-20 → 2013-04-03 (-47d) | 0d → 24.75d |
| 172 | **Implementación** | 2013-05-20 → 2013-04-03 (-47d) | 2013-05-20 → 2013-04-03 (-47d) | 0d → 24.75d |
| 173 | **Implementar la arquitectura** | 2013-05-20 → 2013-04-03 (-47d) | 2013-05-20 → 2013-04-03 (-47d) | 0d → 24.75d |
| 174 | Identificar componentes relevantes para la arquitectura | 2013-05-20 → 2013-04-03 (-47d) | 2013-05-20 → 2013-04-03 (-47d) | 0d → 24.75d |
| 175 | Asignar componentes a nodos | 2013-05-20 → 2013-04-03 (-47d) | 2013-05-20 → 2013-04-03 (-47d) | 0d → 24.75d |
| 176 | **Integrar sistema** | 2013-05-20 → 2013-04-03 (-47d) | 2013-05-20 → 2013-04-03 (-47d) | 0d → 24.75d |
| 177 | Definir construcciones a integrar | 2013-05-20 → 2013-04-03 (-47d) | 2013-05-20 → 2013-04-03 (-47d) | 0d → 24.75d |
| 178 | Comprobar compatibilidad de construcciones | 2013-05-20 → 2013-04-03 (-47d) | 2013-05-20 → 2013-04-03 (-47d) | 0d → 24.75d |
| 179 | Crear plan de integración de construcción | 2013-05-20 → 2013-04-03 (-47d) | 2013-05-20 → 2013-04-03 (-47d) | 0d → 24.75d |
| 180 | Integrar construcciones de sistema | 2013-05-20 → 2013-04-03 (-47d) | 2013-05-20 → 2013-04-03 (-47d) | 0d → 24.75d |
| 181 | **Implementar subsistema** | 2013-05-20 → 2013-04-03 (-47d) | 2013-05-20 → 2013-04-03 (-47d) | 0d → 24.75d |
| 182 | Definir objetivos y alcances del subsistema | 2013-05-20 → 2013-04-03 (-47d) | 2013-05-20 → 2013-04-03 (-47d) | 0d → 24.75d |
| 183 | Implementar subsistema en la construcción actual | 2013-05-20 → 2013-04-03 (-47d) | 2013-05-20 → 2013-04-03 (-47d) | 0d → 24.75d |
| 184 | Mantener los contenidos del subsistema | 2013-05-20 → 2013-04-03 (-47d) | 2013-05-20 → 2013-04-03 (-47d) | 0d → 24.75d |
| 185 | **Implementar clase** | 2013-05-20 → 2013-04-03 (-47d) | 2013-05-20 → 2013-04-03 (-47d) | 0d → 24.75d |
| 186 | Identificar clases de diseño a implementar | 2013-05-20 → 2013-04-03 (-47d) | 2013-05-20 → 2013-04-03 (-47d) | 0d → 24.75d |
| 187 | Generar código a partir de las clases de diseño | 2013-05-20 → 2013-04-03 (-47d) | 2013-05-20 → 2013-04-03 (-47d) | 0d → 24.75d |
| 188 | Implementar operaciones correspondientes en cada clase | 2013-05-20 → 2013-04-03 (-47d) | 2013-05-20 → 2013-04-03 (-47d) | 0d → 24.75d |
| 189 | Comprobar que las clases implementan las interfaces correspondientes | 2013-05-20 → 2013-04-03 (-47d) | 2013-05-20 → 2013-04-03 (-47d) | 0d → 24.75d |
| 190 | **Realizar pruebas de unidad** | 2013-05-20 → 2013-04-03 (-47d) | 2013-05-20 → 2013-04-03 (-47d) | 0d → 24.75d |
| 191 | Realizar plan de pruebas de unidad | 2013-05-20 → 2013-04-03 (-47d) | 2013-05-20 → 2013-04-03 (-47d) | 0d → 24.75d |
| 192 | Diseñar pruebas de caja negra, caja blanca y basadas en estados según corresponda | 2013-05-20 → 2013-04-03 (-47d) | 2013-05-20 → 2013-04-03 (-47d) | 0d → 24.75d |
| 193 | Realizar pruebas de unidad | 2013-05-20 → 2013-04-03 (-47d) | 2013-05-20 → 2013-04-03 (-47d) | 0d → 24.75d |
| 194 | Documentar resultados | 2013-05-20 → 2013-04-03 (-47d) | 2013-05-20 → 2013-04-03 (-47d) | 0d → 24.75d |
| 195 | **Prueba** | 2013-05-20 → 2013-04-03 (-47d) | 2013-05-20 → 2013-04-03 (-47d) | 0d → 24.75d |
| 196 | **Planificar pruebas** | 2013-05-20 → 2013-04-03 (-47d) | 2013-05-20 → 2013-04-03 (-47d) | 0d → 24.75d |
| 197 | Describir estrategia de prueba | 2013-05-20 → 2013-04-03 (-47d) | 2013-05-20 → 2013-04-03 (-47d) | 0d → 24.75d |
| 198 | Estimar los recursos para la prueba | 2013-05-20 → 2013-04-03 (-47d) | 2013-05-20 → 2013-04-03 (-47d) | 0d → 24.75d |
| 199 | Planificar el esfuerzo de la prueba | 2013-05-20 → 2013-04-03 (-47d) | 2013-05-20 → 2013-04-03 (-47d) | 0d → 24.75d |
| 200 | **Diseñar pruebas** | 2013-05-20 → 2013-04-03 (-47d) | 2013-05-20 → 2013-04-03 (-47d) | 0d → 24.75d |
| 201 | Identificar casos de prueba | 2013-05-20 → 2013-04-03 (-47d) | 2013-05-20 → 2013-04-03 (-47d) | 0d → 24.75d |
| 202 | Describir casos de prueba | 2013-05-20 → 2013-04-03 (-47d) | 2013-05-20 → 2013-04-03 (-47d) | 0d → 24.75d |
| 203 | Estructurar procedimiento de prueba | 2013-05-20 → 2013-04-03 (-47d) | 2013-05-20 → 2013-04-03 (-47d) | 0d → 24.75d |
| 204 | **Automatizar pruebas** | 2013-05-20 → 2013-04-03 (-47d) | 2013-05-20 → 2013-04-03 (-47d) | 0d → 24.75d |
| 205 | Identificar procedimientos de prueba automatizables | 2013-05-20 → 2013-04-03 (-47d) | 2013-05-20 → 2013-04-03 (-47d) | 0d → 24.75d |
| 206 | Crear componente de prueba | 2013-05-20 → 2013-04-03 (-47d) | 2013-05-20 → 2013-04-03 (-47d) | 0d → 24.75d |
| 207 | **Realizar pruebas** | 2013-05-20 → 2013-04-03 (-47d) | 2013-05-20 → 2013-04-03 (-47d) | 0d → 24.75d |
| 208 | Realizar pruebas de integración | 2013-05-20 → 2013-04-03 (-47d) | 2013-05-20 → 2013-04-03 (-47d) | 0d → 24.75d |
| 209 | Realizar pruebas de sistema | 2013-05-20 → 2013-04-03 (-47d) | 2013-05-20 → 2013-04-03 (-47d) | 0d → 24.75d |
| 210 | Registrar resultados de pruebas | 2013-05-20 → 2013-04-03 (-47d) | 2013-05-20 → 2013-04-03 (-47d) | 0d → 24.75d |

| ID | Task | Start | Finish | Total float |
| --- | --- | --- | --- | --- |
| 211 | **Evaluar pruebas** | 2013-05-20 → 2013-04-03 (-47d) | 2013-05-20 → 2013-04-03 (-47d) | 0d → 24.75d |
| 212 | Evaluar esfuerzos de prueba | 2013-05-20 → 2013-04-03 (-47d) | 2013-05-20 → 2013-04-03 (-47d) | 0d → 24.75d |
| 213 | Comparar resultados con los objetivos establecidos en el plan de pruebas | 2013-05-20 → 2013-04-03 (-47d) | 2013-05-20 → 2013-04-03 (-47d) | 0d → 24.75d |
| 214 | Establecer métricas y fiabilidad del sistema | 2013-05-20 → 2013-04-03 (-47d) | 2013-05-20 → 2013-04-03 (-47d) | 0d → 24.75d |
| 215 | **Distribución del SW** | 2013-05-20 → 2013-04-03 (-47d) | 2013-05-20 → 2013-04-03 (-47d) | 0d → 24.75d |
| 216 | **Planificar la distribución** | 2013-05-20 → 2013-04-03 (-47d) | 2013-05-20 → 2013-04-03 (-47d) | 0d → 24.75d |
| 217 | Definir fecha de instalación del sistema | 2013-05-20 → 2013-04-03 (-47d) | 2013-05-20 → 2013-04-03 (-47d) | 0d → 24.75d |
| 218 | Definir lugar y fecha de capacitaciones | 2013-05-20 → 2013-04-03 (-47d) | 2013-05-20 → 2013-04-03 (-47d) | 0d → 24.75d |
| 219 | Definir recursos asignados a la distribución | 2013-05-20 → 2013-04-03 (-47d) | 2013-05-20 → 2013-04-03 (-47d) | 0d → 24.75d |
| 220 | **Producir unidad de distribución** | 2013-05-20 → 2013-04-03 (-47d) | 2013-05-20 → 2013-04-03 (-47d) | 0d → 24.75d |
| 221 | Definir forma de entrega del SW | 2013-05-20 → 2013-04-03 (-47d) | 2013-05-20 → 2013-04-03 (-47d) | 0d → 24.75d |
| 222 | Identificar los artefactos necesarios para instalar y usar el sistema | 2013-05-20 → 2013-04-03 (-47d) | 2013-05-20 → 2013-04-03 (-47d) | 0d → 24.75d |
| 223 | Empaquetar el producto | 2013-05-20 → 2013-04-03 (-47d) | 2013-05-20 → 2013-04-03 (-47d) | 0d → 24.75d |
| 224 | **Efectuar capacitaciones** | 2013-05-20 → 2013-04-03 (-47d) | 2013-05-20 → 2013-04-03 (-47d) | 0d → 24.75d |
| 225 | Confeccionar Material de Soporte | 2013-05-20 → 2013-04-03 (-47d) | 2013-05-20 → 2013-04-03 (-47d) | 0d → 24.75d |
| 226 | Organizar capacitaciones | 2013-05-20 → 2013-04-03 (-47d) | 2013-05-20 → 2013-04-03 (-47d) | 0d → 24.75d |
| 227 | Realizar las capacitaciones correspondientes | 2013-05-20 → 2013-04-03 (-47d) | 2013-05-20 → 2013-04-03 (-47d) | 0d → 24.75d |
| 228 | Evaluar la capacitacion | 2013-05-20 → 2013-04-03 (-47d) | 2013-05-20 → 2013-04-03 (-47d) | 0d → 24.75d |
| 229 | **Nivel de Esfuerzo** | 2013-05-20 → 2013-04-03 (-47d) | 2013-05-20 → 2013-04-03 (-47d) | 0d → 24.75d |
| 230 | **Organización de reuniones** | 2013-05-20 → 2013-04-03 (-47d) | 2013-05-20 → 2013-04-03 (-47d) | 0d → 24.75d |
| 231 | Establecer lugar, fecha y hora de reunión | 2013-05-20 → 2013-04-03 (-47d) | 2013-05-20 → 2013-04-03 (-47d) | 0d → 24.75d |
| 232 | Asistir a la reunión | 2013-05-20 → 2013-04-03 (-47d) | 2013-05-20 → 2013-04-03 (-47d) | 0d → 24.75d |
| 233 | Documentar temas tratados | 2013-05-20 → 2013-04-03 (-47d) | 2013-05-20 → 2013-04-03 (-47d) | 0d → 24.75d |
| 234 | **Presentaciones** | 2013-05-20 → 2013-04-03 (-47d) | 2013-05-20 → 2013-04-03 (-47d) | 0d → 24.75d |
| 235 | Definir temas a presentar | 2013-05-20 → 2013-04-03 (-47d) | 2013-05-20 → 2013-04-03 (-47d) | 0d → 24.75d |
| 236 | Estructurar presentación | 2013-05-20 → 2013-04-03 (-47d) | 2013-05-20 → 2013-04-03 (-47d) | 0d → 24.75d |
| 237 | Llevar a cabo la presentación | 2013-05-20 → 2013-04-03 (-47d) | 2013-05-20 → 2013-04-03 (-47d) | 0d → 24.75d |
| 238 | **Investigaciones** | 2013-05-20 → 2013-04-03 (-47d) | 2013-05-20 → 2013-04-03 (-47d) | 0d → 24.75d |
| 239 | Definir temas a investigar | 2013-05-20 → 2013-04-03 (-47d) | 2013-05-20 → 2013-04-03 (-47d) | 0d → 24.75d |
| 240 | Buscar material relevante | 2013-05-20 → 2013-04-03 (-47d) | 2013-05-20 → 2013-04-03 (-47d) | 0d → 24.75d |
| 241 | Asimilar los conocimientos (teórica y prácticamente) | 2013-05-20 → 2013-04-03 (-47d) | 2013-05-20 → 2013-04-03 (-47d) | 0d → 24.75d |

## Version 3 (saved 2013-06-11)

Note of the change: Cronograma terminado. Enlazado correctamente al WBS Chart.

Last finish 2013-06-29 → 2014-04-15 (+290d).

Removed: 152 Realización de caso de uso - diseño (Solo los CU esenciales); 153 Identificar clases de diseño participantes; 154 Aplicar Patrones de Diseño; 155 Describir interacciones entre objetos de diseño; 156 Estructurar diagrama de clases de diseño

Changed:

| ID | Task | Start | Finish | Duration | Total float | Predecessors | Other |
| --- | --- | --- | --- | --- | --- | --- | --- |
| 1 | **Proyecto: S.A.P.O.** | 2013-04-03 → 2013-04-03 08:00 | 2013-06-29 → 2014-04-15 14:30 (+290d) | 25.75d → 268.54d | 0d → -18.04d |  |  |
| 2 | **Gestión de Proyecto** | 2013-04-03 → 2013-04-03 08:00 | 2013-05-22 → 2013-08-15 18:00 (+85d) | 15d → 96.83d | 10.75d → 74.58d |  |  |
| 3 | **Alcance** | 2013-04-03 → 2013-04-03 08:00 | 2013-05-22 → 2013-04-23 14:00 (-29d) | 15d → 14.5d | 10.75d → 74.58d |  |  |
| 4 | **Desarrollo idea de Proyecto** | 2013-04-03 → 2013-04-03 08:00 | 2013-04-24 → 2013-04-09 14:00 (-15d) | 6.25d → 4.5d | 19.5d → 74.58d |  |  |
| 5 | Definir objetivos | 2013-04-03 → 2013-04-03 08:00 | 2013-04-03 → 2013-04-03 16:00 | 4h → 8h | 19.5d → 74.58d |  | resources Adm. de Proyecto; Analista Funcional I → none |
| 6 | Definir ámbito | 2013-04-03 → 2013-04-03 16:00 | 2013-04-10 → 2013-04-05 08:00 (-5d) |  | 19.5d → 74.58d |  |  |
| 7 | Analizar y definir solución | 2013-04-10 → 2013-04-05 08:00 (-5d) | 2013-04-24 → 2013-04-09 14:00 (-15d) |  | 19.5d → 74.58d |  |  |
| 8 | **Definición alcance de proyecto** | 2013-04-03 → 2013-04-09 14:00 (+6d) | 2013-04-06 → 2013-04-10 16:00 (+4d) | 1.75d → 1.17d | 24d → 83.42d | none → 4 |  |
| 9 | Identificar supuestos y restricciones | 2013-04-03 → 2013-04-09 14:00 (+6d) | 2013-04-03 → 2013-04-09 18:00 (+6d) |  | 24.75d → 83.92d |  |  |
| 10 | Identificar entregables de trabajo | 2013-04-03 → 2013-04-09 14:00 (+6d) | 2013-04-06 → 2013-04-10 12:00 (+4d) |  | 24d → 83.42d |  |  |
| 11 | Definir roles participantes | 2013-04-03 → 2013-04-09 14:00 (+6d) | 2013-04-03 → 2013-04-09 18:00 (+6d) |  | 24.75d → 83.92d |  |  |
| 12 | Elaborar Project Charter | 2013-04-06 → 2013-04-10 12:00 (+4d) | 2013-04-06 → 2013-04-10 16:00 (+4d) |  | 24d → 83.42d |  |  |
| 13 | Elaborar Scope Statement | 2013-04-06 → 2013-04-10 12:00 (+4d) | 2013-04-06 → 2013-04-10 16:00 (+4d) |  | 24d → 83.42d |  |  |
| 14 | **Desglose de trabajo (WBS)** | 2013-04-03 → 2013-04-09 14:00 (+6d) | 2013-05-22 → 2013-04-23 14:00 (-29d) | 15d → 10d | 10.75d → 74.58d | none → 4 |  |
| 15 | Identificar componentes y estructurar la WBS | 2013-04-03 → 2013-04-09 14:00 (+6d) | 2013-04-24 → 2013-04-13 16:00 (-11d) |  | 10.75d → 74.58d |  |  |
| 16 | Elaborar diccionario de la WBS | 2013-04-24 → 2013-04-13 16:00 (-11d) | 2013-05-18 → 2013-04-20 16:00 (-28d) |  | 10.75d → 74.58d |  |  |
| 17 | Realizar listado de actividades | 2013-05-18 → 2013-04-20 16:00 (-28d) | 2013-05-22 → 2013-04-23 14:00 (-29d) |  | 10.75d → 74.58d |  |  |
| 18 | **Planificar Iteraciones del proyecto** | 2013-04-03 → 2013-04-03 08:00 | 2013-04-17 → 2013-04-06 12:00 (-11d) | 5d → 3.33d | 20.75d → 85.75d |  |  |
| 19 | Armar lista priorizada de requerimientos con el cliente | 2013-04-03 → 2013-04-03 08:00 | 2013-04-06 → 2013-04-03 18:00 (-3d) |  | 20.75d → 85.75d |  |  |
| 20 | Definir requerimientos a incluir en cada iteración | 2013-04-06 → 2013-04-03 18:00 (-3d) | 2013-04-13 → 2013-04-05 09:00 (-8d) |  | 20.75d → 85.75d |  |  |
| 21 | Asignar recursos para cada iteración | 2013-04-13 → 2013-04-05 09:00 (-8d) | 2013-04-17 → 2013-04-05 19:00 (-12d) |  | 20.75d → 85.75d |  |  |
| 22 | Documentar planificación de las iteraciones | 2013-04-17 → 2013-04-06 07:00 (-11d) | 2013-04-17 → 2013-04-06 12:00 (-11d) |  | 20.75d → 85.75d |  |  |
| 23 | **Tiempo** | 2013-04-03 → 2013-04-23 14:00 (+20d) | 2013-04-13 → 2013-05-01 12:00 (+18d) | 3.75d → 5.83d | 22d → 248.21d | none → 3 |  |
| 24 | **Estimación de recursos y duración actividades** | 2013-04-03 → 2013-04-23 14:00 (+20d) | 2013-04-06 → 2013-04-24 18:00 (+18d) | 2d → 1.33d | 23.75d → 248.21d |  |  |
| 25 | Estimar duración actividades | 2013-04-03 → 2013-04-23 14:00 (+20d) | 2013-04-06 → 2013-04-24 12:00 (+18d) |  | 23.75d → 248.21d |  |  |
| 26 | Estimar recursos necesarios | 2013-04-03 → 2013-04-23 14:00 (+20d) | 2013-04-03 → 2013-04-23 19:00 (+20d) |  | 24.38d → 248.62d |  |  |
| 27 | Análisis de estimaciones | 2013-04-06 → 2013-04-24 12:00 (+18d) | 2013-04-06 → 2013-04-24 18:00 (+18d) |  | 23.75d → 248.21d |  |  |
| 28 | **Desarrollo del Cronograma** | 2013-04-03 → 2013-04-24 18:00 (+21d) | 2013-04-13 → 2013-04-27 12:00 (+14d) | 3.75d → 2.5d | 22d → 248.21d | none → 24 |  |
| 29 | Identificar hitos del proyecto | 2013-04-03 → 2013-04-24 18:00 (+21d) | 2013-04-03 → 2013-04-25 10:00 (+22d) |  | 24d → 249.54d |  |  |
| 30 | Identificar actividades críticas | 2013-04-03 → 2013-04-24 18:00 (+21d) | 2013-04-06 → 2013-04-25 16:00 (+19d) |  | 22d → 248.21d |  |  |
| 31 | Analizar secuenciamiento de actividades | 2013-04-06 → 2013-04-25 16:00 (+19d) | 2013-04-10 → 2013-04-26 14:00 (+16d) |  | 22d → 248.21d |  |  |
| 32 | Definir cronograma | 2013-04-10 → 2013-04-26 14:00 (+16d) | 2013-04-13 → 2013-04-27 12:00 (+14d) |  | 22d → 248.21d |  |  |
| 33 | **Control del Cronograma** | 2013-04-03 → 2013-04-27 12:00 (+24d) | 2013-04-10 → 2013-05-01 12:00 (+21d) | 3d → 2d | 22.75d → 248.21d | none → 28 |  |
| 34 | Determinar estado actual | 2013-04-03 → 2013-04-27 12:00 (+24d) | 2013-04-06 → 2013-04-30 10:00 (+24d) |  | 22.75d → 248.21d |  |  |
| 35 | Analizar factores que generan cambios | 2013-04-06 → 2013-04-30 10:00 (+24d) | 2013-04-10 → 2013-05-01 08:00 (+21d) |  | 22.75d → 248.21d |  |  |
| 36 | Gestionar cambios en el cronograma | 2013-04-10 → 2013-05-01 08:00 (+21d) | 2013-04-10 → 2013-05-01 12:00 (+21d) |  | 22.75d → 248.21d |  |  |
| 37 | **Riesgos** | 2013-04-03 → 2013-08-07 08:00 (+126d) | 2013-04-13 → 2013-08-14 22:00 (+123d) | 3.75d → 5.92d | 22d → none | none → 3 |  |
| 38 | **Planificación de la gestión de riesgos** | 2013-04-03 → 2013-08-07 08:00 (+126d) | 2013-04-06 → 2013-08-08 11:00 (+124d) | 1.88d → 1.25d | 23.88d → -0.92d |  |  |
| 39 | Definir metodologías | 2013-04-03 → 2013-08-07 08:00 (+126d) | 2013-04-03 → 2013-08-07 13:00 (+126d) |  | 25.12d → -0.08d |  |  |
| 40 | Definir roles y responsabilidades | 2013-04-03 → 2013-08-07 08:00 (+126d) | 2013-04-06 → 2013-08-07 18:00 (+123d) |  | 23.88d → -0.92d |  |  |
| 41 | Asignar recursos | 2013-04-06 → 2013-08-07 18:00 (+123d) | 2013-04-06 → 2013-08-08 11:00 (+124d) |  | 23.88d → -0.92d |  |  |
| 42 | Establecer frecuencia de supervisión y control | 2013-04-03 → 2013-08-07 08:00 (+126d) | 2013-04-03 → 2013-08-07 10:00 (+126d) |  | 25.5d → 0.17d |  |  |
| 43 | **Identificación y análisis de riesgos** | 2013-04-03 → 2013-08-08 11:00 (+127d) | 2013-04-13 → 2013-08-10 17:00 (+119d) | 3.75d → 2.5d | 22d → -0.92d | none → 38 |  |
| 44 | Listar riesgos del proyecto | 2013-04-03 → 2013-08-08 11:00 (+127d) | 2013-04-06 → 2013-08-09 09:00 (+125d) |  | 22d → -0.92d |  |  |
| 45 | Analizar probabilidad e impacto de los riesgos | 2013-04-06 → 2013-08-09 09:00 (+125d) | 2013-04-13 → 2013-08-10 12:00 (+119d) |  | 22d → -0.92d |  |  |
| 46 | Elaborar matriz de probabilidad e impacto | 2013-04-13 → 2013-08-10 12:00 (+119d) | 2013-04-13 → 2013-08-10 17:00 (+119d) |  | 22d → -0.92d |  |  |
| 47 | **Selección de riesgos y planes de respuesta** | 2013-04-03 → 2013-08-10 17:00 (+129d) | 2013-04-10 → 2013-08-14 10:00 (+126d) | 2.12d → 1.42d | 23.62d → -0.92d | none → 43 |  |
| 48 | Elegir criterio de selección | 2013-04-03 → 2013-08-10 17:00 (+129d) | 2013-04-03 → 2013-08-10 19:00 (+129d) |  | 23.62d → -0.92d |  |  |
| 49 | Seleccionar riesgos a contemplar | 2013-04-03 → 2013-08-13 07:00 (+132d) | 2013-04-03 → 2013-08-13 12:00 (+132d) |  | 23.62d → -0.92d |  |  |
| 50 | Definir estrategia de respuesta | 2013-04-03 → 2013-08-13 12:00 (+132d) | 2013-04-06 → 2013-08-13 14:00 (+129d) |  | 23.62d → -0.92d |  |  |
| 51 | Planificar estrategias | 2013-04-06 → 2013-08-13 14:00 (+129d) | 2013-04-06 → 2013-08-13 19:00 (+129d) |  | 23.62d → -0.92d |  |  |
| 52 | Documentar resultados | 2013-04-06 → 2013-08-14 07:00 (+130d) | 2013-04-10 → 2013-08-14 10:00 (+126d) |  | 23.62d → -0.92d |  |  |
| 53 | **Supervisión y control** | 2013-04-03 → 2013-08-14 10:00 (+133d) | 2013-04-10 → 2013-08-15 18:00 (+127d) | 2.5d → 1.67d | 23.25d → -0.92d | none → 47 |  |
| 54 | Supervisar y reevaluar los riesgos | 2013-04-03 → 2013-08-14 10:00 (+133d) | 2013-04-06 → 2013-08-15 13:00 (+131d) |  | 23.25d → -0.92d |  |  |
| 55 | Identificar nuevos riesgos | 2013-04-03 → 2013-08-14 10:00 (+133d) | 2013-04-06 → 2013-08-15 13:00 (+131d) |  | 23.25d → -0.92d |  |  |
| 56 | Documentar cambios en el plan | 2013-04-06 → 2013-08-15 13:00 (+131d) | 2013-04-10 → 2013-08-15 18:00 (+127d) |  | 23.25d → -0.92d |  |  |
| 57 | **Gestión de recursos humanos** | 2013-04-03 → 2013-04-03 08:00 | 2013-05-11 → 2013-04-12 14:00 (-29d) | 11.25d → 7.5d | 14.5d → 261.04d |  |  |
| 58 | **Planificación** | 2013-04-03 → 2013-04-03 08:00 | 2013-04-03 → 2013-04-03 13:00 | 0.62d → 0.42d | 25.12d → 268.12d |  |  |
| 59 | Definir roles y responsabilidades | 2013-04-03 → 2013-04-03 08:00 | 2013-04-03 → 2013-04-03 13:00 |  | 25.12d → 268.12d |  |  |
| 60 | Definir calendario de recursos | 2013-04-03 → 2013-04-03 08:00 | 2013-04-03 → 2013-04-03 13:00 |  | 25.12d → 268.12d |  |  |
| 61 | Elaborar plantillas de documentación | 2013-04-03 → 2013-04-03 08:00 | 2013-04-03 → 2013-04-03 13:00 |  | 25.12d → 268.12d |  |  |
| 62 | **Gestión de reuniones** | 2013-04-03 → 2013-04-03 08:00 | 2013-05-11 → 2013-04-12 14:00 (-29d) | 11.25d → 7.5d | 14.5d → 261.04d |  |  |
| 63 | Definir cheklist de temas a tratar | 2013-04-03 → 2013-04-03 08:00 | 2013-04-10 → 2013-04-04 16:00 (-6d) |  | 14.5d → 261.04d |  |  |
| 64 | Establecer lugar, fecha y hora | 2013-04-03 → 2013-04-03 08:00 | 2013-04-03 → 2013-04-03 13:00 |  | 16.38d → 262.29d |  |  |
| 65 | Concretar reunión | 2013-04-10 → 2013-04-04 16:00 (-6d) | 2013-05-01 → 2013-04-10 18:00 (-21d) |  | 14.5d → 261.04d |  |  |
| 66 | Completar minuta de reunión semanal | 2013-05-01 → 2013-04-10 18:00 (-21d) | 2013-05-11 → 2013-04-12 14:00 (-29d) |  | 14.5d → 261.04d |  |  |
| 67 | **Producto** | 2013-04-03 → 2013-04-03 08:00 | 2013-06-29 → 2014-04-15 14:30 (+290d) | 25.75d → 268.54d | 0d → -18.04d |  |  |
| 68 | **Relevamiento** | 2013-04-03 → 2013-04-03 08:00 | 2013-06-29 → 2013-05-07 13:30 (-53d) | 25.75d → 24.46d | 0d → -18.04d |  |  |
| 69 | **Diseñar instrumento de relevamiento** | 2013-04-03 → 2013-04-03 08:00 | 2013-05-18 → 2013-04-13 17:00 (-35d) | 13.12d → 8.75d | 12.62d → -18.04d |  |  |
| 70 | Definir ámbito de relevamiento | 2013-04-03 → 2013-04-03 08:00 | 2013-04-06 → 2013-04-03 18:00 (-3d) |  | 23.25d → -10.96d |  |  |

| ID | Task | Start | Finish | Duration | Total float | Predecessors | Other |
| --- | --- | --- | --- | --- | --- | --- | --- |
| 71 | Seleccionar la herramienta de relevamiento apropiada | 2013-04-03 → 2013-04-03 08:00 | 2013-04-10 → 2013-04-04 16:00 (-6d) |  | 12.62d → -18.04d |  |  |
| 72 | Seleccionar el medio de relevamiento | 2013-04-10 → 2013-04-04 16:00 (-6d) | 2013-04-13 → 2013-04-05 14:00 (-8d) |  | 22d → -11.79d |  |  |
| 73 | Elaborar listado de preguntas tentativas | 2013-04-10 → 2013-04-04 16:00 (-6d) | 2013-04-20 → 2013-04-06 17:00 (-14d) |  | 12.62d → -18.04d |  |  |
| 74 | Seleccionar las preguntas a realizar | 2013-04-20 → 2013-04-06 17:00 (-14d) | 2013-05-01 → 2013-04-10 13:00 (-21d) |  | 12.62d → -18.04d |  |  |
| 75 | Diseñar y confeccionar la herramienta | 2013-05-01 → 2013-04-10 13:00 (-21d) | 2013-05-11 → 2013-04-12 19:00 (-29d) |  | 12.62d → -18.04d |  |  |
| 76 | Estimar cantidad de formularios y emitir los mismos | 2013-05-11 → 2013-04-13 07:00 (-28d) | 2013-05-18 → 2013-04-13 17:00 (-35d) |  | 12.62d → -18.04d |  |  |
| 77 | **Relevar información** | 2013-04-03 → 2013-04-13 17:00 (+10d) | 2013-04-27 → 2013-04-20 17:00 (-7d) | 7.5d → 5d | 18.25d → -18.04d | none → 69 |  |
| 78 | Analizar el medio de relevamiento | 2013-04-03 → 2013-04-13 17:00 (+10d) | 2013-04-03 → 2013-04-16 10:00 (+13d) |  | 18.25d → -18.04d |  |  |
| 79 | Determinar fecha y hora de relevamiento. En caso de ser necesario, concertar cita con stakeholder | 2013-04-03 → 2013-04-16 10:00 (+13d) | 2013-04-06 → 2013-04-17 08:00 (+11d) |  | 18.25d → -18.04d |  |  |
| 80 | Preparar el relevamiento | 2013-04-06 → 2013-04-17 08:00 (+11d) | 2013-04-13 → 2013-04-17 18:00 (+4d) |  | 18.25d → -18.04d |  |  |
| 81 | Realizar relevamiento mediante la herramienta | 2013-04-13 → 2013-04-17 18:00 (+4d) | 2013-04-24 → 2013-04-20 12:00 (-4d) |  | 18.25d → -18.04d |  |  |
| 82 | Concluir el relevamiento realizado | 2013-04-24 → 2013-04-20 12:00 (-4d) | 2013-04-27 → 2013-04-20 17:00 (-7d) |  | 18.25d → -18.04d |  |  |
| 83 | **Analizar Información** | 2013-04-03 → 2013-04-20 17:00 (+17d) | 2013-04-24 → 2013-04-27 12:00 (+3d) | 6.88d → 4.58d | 18.88d → -18.04d | none → 77 |  |
| 84 | Organizar información recabada de acuerdo a criterios que simplifiquen su análisis | 2013-04-03 → 2013-04-20 17:00 (+17d) | 2013-04-03 → 2013-04-23 10:00 (+20d) |  | 18.88d → -18.04d |  |  |
| 85 | Analizar la información | 2013-04-03 → 2013-04-23 10:00 (+20d) | 2013-04-06 → 2013-04-24 08:00 (+18d) |  | 18.88d → -18.04d |  |  |
| 86 | Debatir grupalmente los resultados del análisis para comprender el funcionamiento de la organización | 2013-04-06 → 2013-04-24 08:00 (+18d) | 2013-04-17 → 2013-04-25 16:00 (+8d) |  | 18.88d → -18.04d |  |  |
| 87 | Elaborar conclusión de relevamiento destacando nuevos puntos a investigar | 2013-04-17 → 2013-04-25 16:00 (+8d) | 2013-04-24 → 2013-04-27 12:00 (+3d) |  | 18.88d → -18.04d |  |  |
| 88 | **Documentar el proceso de negocio** | 2013-04-03 → 2013-04-27 12:00 (+24d) | 2013-06-29 → 2013-05-04 18:00 (-56d) | 25.75d → 5.5d | 0d → -18.04d | none → 83 |  |
| 89 | Identificar y discutir grupalmente los diferentes procesos de negocio presentes en la organización | 2013-04-03 → 2013-04-27 12:00 (+24d) | 2013-04-03 → 2013-04-27 17:00 (+24d) |  | 0d → -18.04d |  |  |
| 90 | Seleccionar los procesos que serán afectados por el sistema de información | 2013-04-03 → 2013-04-27 17:00 (+24d) | 2013-04-06 → 2013-04-30 11:00 (+24d) |  | 0d → -18.04d |  |  |
| 91 | Confeccionar mapa global de los procesos de entorno | 2013-04-06 → 2013-04-30 11:00 (+24d) | 2013-04-10 → 2013-05-01 09:00 (+21d) |  | 23.12d → -14.29d |  |  |
| 92 | Describir los procesos identificados a los que da soporte el sistema de información | 2013-04-06 → 2013-04-30 11:00 (+24d) | 2013-04-13 → 2013-05-01 19:00 (+18d) |  | 0d → -18.04d |  |  |
| 93 | Identificar los problemas de los procesos actuales | 2013-04-13 → 2013-05-02 07:00 (+19d) | 2013-04-20 → 2013-05-02 17:00 (+12d) |  | 0d → -18.04d |  |  |
| 94 | Establecer puntos de mejora | 2013-04-20 → 2013-05-02 17:00 (+12d) | 2013-04-20 → 2013-05-03 10:00 (+13d) |  | 0d → -18.04d |  |  |
| 95 | Desarrollar una propuesta de mejora que contemple los problemas y los puntos de mejora identificados | 2013-04-20 → 2013-05-03 10:00 (+13d) | 2013-06-29 → 2013-05-04 18:00 (-56d) | 20d → 20h | 0d → -18.04d |  |  |
| 96 | **Aceptación del Cliente** | 2013-04-03 → 2013-05-04 18:00 (+31d) | 2013-04-06 → 2013-05-07 13:30 (+31d) | 1.38d → 0.62d | 24.38d → -18.04d | none → 88 |  |
| 97 | Enviar la documentación del proceso de negocio al cliente | 2013-04-03 → 2013-05-04 18:00 (+31d) | 2013-04-03 → 2013-05-04 19:00 (+31d) |  | 24.38d → -18.04d |  |  |
| 98 | Evaluar retroalimentación del cliente | 2013-04-03 → 2013-05-07 07:00 (+34d) | 2013-04-03 → 2013-05-07 11:00 (+34d) |  | 24.38d → -18.04d |  |  |
| 99 | Actualizar documentación | 2013-04-03 → 2013-05-07 11:00 (+34d) | 2013-04-03 → 2013-05-07 13:00 (+34d) |  | 24.38d → -18.04d |  |  |
| 100 | Registrar aprobacion del cliente | 2013-04-03 → 2013-05-07 13:00 (+34d) | 2013-04-06 → 2013-05-07 13:30 (+31d) | 0.5d → 0.5h | 24.38d → -18.04d |  |  |
| 101 | **Requerimiento 1...N** | 2013-04-03 → 2013-05-07 13:30 (+34d) | 2013-06-15 → 2013-05-31 18:30 (-15d) | 22d → 18.42d | 3.75d → -18.04d | none → 68 | was named Requerimiento |
| 102 | **Especificar requerimientos del sistema** | 2013-04-03 → 2013-05-07 13:30 (+34d) | 2013-04-20 → 2013-05-11 10:30 (+21d) | 5.62d → 3.75d | 20.12d → -18.04d |  |  |
| 103 | Identificar requerimientos globales de la organización | 2013-04-03 → 2013-05-07 13:30 (+34d) | 2013-04-03 → 2013-05-07 18:30 (+34d) |  | 20.12d → -18.04d |  |  |
| 104 | Identificar requerimientos detallados de la organización | 2013-04-03 → 2013-05-07 18:30 (+34d) | 2013-04-13 → 2013-05-09 14:30 (+26d) |  | 20.12d → -18.04d |  |  |
| 105 | Realizar descripción de requerimientos funcionales | 2013-04-13 → 2013-05-09 14:30 (+26d) | 2013-04-20 → 2013-05-11 10:30 (+21d) |  | 20.12d → -18.04d |  |  |
| 106 | Realizar descripción de requerimientos no funcionales | 2013-04-13 → 2013-05-09 14:30 (+26d) | 2013-04-17 → 2013-05-10 12:30 (+23d) |  | 21.38d → -17.21d |  |  |
| 107 | **Estructurar modelo de casos de uso del sistema** | 2013-04-03 → 2013-05-11 10:30 (+38d) | 2013-06-15 → 2013-05-31 18:30 (-15d) | 22d → 14.67d | 3.75d → -18.04d | none → 102 |  |
| 108 | Identificar y describir actores | 2013-04-03 → 2013-05-11 10:30 (+38d) | 2013-04-03 → 2013-05-11 14:30 (+38d) |  | 3.75d → -18.04d |  |  |
| 109 | Identificar relaciones entre los actores | 2013-04-03 → 2013-05-11 14:30 (+38d) | 2013-04-03 → 2013-05-11 16:30 (+38d) |  | 3.75d → -18.04d |  |  |
| 110 | Identificar Casos de Uso del sistema | 2013-04-03 → 2013-05-11 16:30 (+38d) | 2013-04-17 → 2013-05-16 10:30 (+29d) |  | 3.75d → -18.04d |  |  |
| 111 | Describir objetivos de casos de uso del sistema | 2013-04-17 → 2013-05-16 10:30 (+29d) | 2013-05-04 → 2013-05-21 14:30 (+17d) |  | 3.75d → -18.04d |  |  |
| 112 | Describir trazo grueso de casos de uso del sistema | 2013-04-17 → 2013-05-16 10:30 (+29d) | 2013-04-20 → 2013-05-16 17:30 (+26d) |  | 17.88d → -8.62d |  |  |
| 113 | Describir trazo fino de CU esenciales del sistema | 2013-04-17 → 2013-05-16 10:30 (+29d) | 2013-05-08 → 2013-05-22 12:30 (+14d) |  | 15d → -10.54d |  |  |
| 114 | Identificar relaciones entre casos de uso | 2013-05-04 → 2013-05-21 14:30 (+17d) | 2013-06-15 → 2013-05-31 18:30 (-15d) |  | 3.75d → -18.04d |  |  |
| 115 | Construir diagramas de caso de uso del sistema | 2013-04-20 → 2013-05-16 17:30 (+26d) | 2013-04-24 → 2013-05-17 15:30 (+23d) |  | 17.88d → -8.62d |  |  |
| 116 | Confeccionar documento de especificación de requerimiento del software | 2013-04-24 → 2013-05-17 15:30 (+23d) | 2013-04-27 → 2013-05-18 13:30 (+21d) |  | 17.88d → -8.62d |  |  |
| 117 | **Realizar modelo de objetos del dominio del problema(MODP)** | 2013-04-03 → 2013-05-11 10:30 (+38d) | 2013-05-01 → 2013-05-21 08:30 (+20d) | 8.75d → 5.83d | 17d → -9.21d | none → 102 |  |
| 118 | Identificar clases del dominio | 2013-04-03 → 2013-05-11 10:30 (+38d) | 2013-04-06 → 2013-05-14 13:30 (+38d) |  | 17d → -9.21d |  |  |
| 119 | Identificar atributos y métodos de clase | 2013-04-06 → 2013-05-14 13:30 (+38d) | 2013-04-20 → 2013-05-17 07:30 (+27d) |  | 17d → -9.21d |  |  |
| 120 | Identificar relaciones entre clases | 2013-04-20 → 2013-05-17 07:30 (+27d) | 2013-04-24 → 2013-05-17 17:30 (+23d) |  | 17d → -9.21d |  |  |
| 121 | Confecionar el diagrama de clases | 2013-04-24 → 2013-05-17 17:30 (+23d) | 2013-05-01 → 2013-05-21 08:30 (+20d) |  | 17d → -9.21d |  |  |
| 122 | **Construir prototipo de interfaz** | 2013-04-03 → 2013-05-07 13:30 (+34d) | 2013-04-20 → 2013-05-11 13:30 (+21d) | 6d → 4d | 19.75d → -3.62d |  |  |
| 123 | Definir un template para la interfaz y prototipos de interfaz | 2013-04-03 → 2013-05-07 13:30 (+34d) | 2013-04-06 → 2013-05-08 16:30 (+32d) |  | 19.75d → -3.62d |  |  |
| 124 | Identificar los casos de uso del sistema que requieren prototipos de interfaz | 2013-04-06 → 2013-05-08 16:30 (+32d) | 2013-04-10 → 2013-05-08 18:30 (+28d) |  | 19.75d → -3.62d |  |  |
| 125 | Definir los datos necesarios para cada interfaz | 2013-04-10 → 2013-05-08 18:30 (+28d) | 2013-04-10 → 2013-05-09 12:30 (+29d) |  | 19.75d → -3.62d |  |  |
| 126 | Diseñar interfaces de cada caso de uso identificado | 2013-04-10 → 2013-05-09 12:30 (+29d) | 2013-04-20 → 2013-05-11 08:30 (+21d) |  | 19.75d → -3.62d |  |  |
| 127 | Definir y diseñar navegabilidad de las interfaces | 2013-04-20 → 2013-05-11 08:30 (+21d) | 2013-04-20 → 2013-05-11 11:30 (+21d) |  | 19.75d → -3.62d |  |  |
| 128 | Recorrer el flujo de trabajo de cada caso de uso mediante las interfaces | 2013-04-20 → 2013-05-11 11:30 (+21d) | 2013-04-20 → 2013-05-11 13:30 (+21d) |  | 19.75d → -3.62d |  |  |
| 129 | **Validación del Cliente** | 2013-04-03 → 2013-05-07 13:30 (+34d) | 2013-04-17 → 2013-05-10 15:30 (+23d) | 4.75d → 3.17d | 21d → -2.79d |  |  |
| 130 | Organizar reunión con el cliente | 2013-04-03 → 2013-05-07 13:30 (+34d) | 2013-04-03 → 2013-05-08 07:30 (+35d) |  | 21d → -2.79d |  |  |
| 131 | Presentar casos de uso identificados y evaluar su validez | 2013-04-03 → 2013-05-08 07:30 (+35d) | 2013-04-13 → 2013-05-09 15:30 (+26d) |  | 21d → -2.79d |  |  |
| 132 | Validar CU esenciales recorriendo los diferentes escenarios mediante las interfaces gráficas | 2013-04-13 → 2013-05-09 15:30 (+26d) | 2013-04-17 → 2013-05-10 13:30 (+23d) |  | 21d → -2.79d |  |  |
| 133 | Registrar aportes y modificaciones hechas por el cliente | 2013-04-17 → 2013-05-10 13:30 (+23d) | 2013-04-17 → 2013-05-10 15:30 (+23d) |  | 21d → -2.79d |  |  |
| 134 | **Análisis 1...N** | 2013-04-03 → 2013-05-17 10:30 (+44d) | 2013-04-03 → 2013-06-05 12:30 (+63d) | 1d → 13.17d | 24.75d → -7.38d | none → 101 | was named Análisis |
| 135 | **Realización de casos de uso esenciales** | 2013-04-03 → 2013-05-17 10:30 (+44d) | 2013-04-03 → 2013-05-23 21:30 (+50d) | 1d → 56.5h | 24.75d → none |  |  |
| 136 | Identificar clases de análisis participantes | 2013-04-03 → 2013-05-17 10:30 (+44d) | 2013-04-03 → 2013-05-18 08:30 (+45d) | 1d → 10h | 24.75d → -7.38d |  |  |
| 137 | Describir interacciones entre objetos de análisis | 2013-04-03 → 2013-05-18 08:30 (+45d) | 2013-04-03 → 2013-05-30 12:30 (+57d) | 1d → 100h | 24.75d → -7.38d | none → 136 |  |
| 138 | Documentar requisitos especiales | 2013-04-03 → 2013-05-30 12:30 (+57d) | 2013-04-03 → 2013-05-30 17:30 (+57d) | 1d → 5h | 24.75d → -7.38d | none → 137 |  |
| 139 | Estructurar diagrama de clases de analisis | 2013-04-03 → 2013-05-30 17:30 (+57d) | 2013-04-03 → 2013-06-04 11:30 (+62d) | 1d → 30h | 24.75d → -7.38d | none → 138 |  |
| 140 | **Estructurar artefactos de análisis en paquetes de análisis** | 2013-04-03 → 2013-05-31 18:30 (+58d) | 2013-04-03 → 2013-06-05 12:30 (+63d) | 1d → 2.5d | 24.75d → -9.25d |  |  |

| ID | Task | Start | Finish | Duration | Total float | Predecessors | Other |
| --- | --- | --- | --- | --- | --- | --- | --- |
| 141 | Identificar clases con alta cohesión | 2013-04-03 → 2013-05-31 18:30 (+58d) | 2013-04-03 → 2013-06-01 14:30 (+59d) | 1d → 8h | 24.75d → -9.25d |  |  |
| 142 | Estructurar las clases en paquetes de análisis | 2013-04-03 → 2013-06-01 14:30 (+59d) | 2013-04-03 → 2013-06-04 14:30 (+62d) | 1d → 12h | 24.75d → -9.25d | none → 141 |  |
| 143 | Identificar relaciones entre paquetes de análisis | 2013-04-03 → 2013-06-04 14:30 (+62d) | 2013-04-03 → 2013-06-05 08:30 (+63d) | 1d → 6h | 24.75d → -9.25d | none → 142 |  |
| 144 | Verificar los paquetes buscando alta cohesión entre sus componentes y bajo acoplamiento con otros paquetes | 2013-04-03 → 2013-06-05 08:30 (+63d) | 2013-04-03 → 2013-06-05 12:30 (+63d) | 1d → 4h | 24.75d → -9.25d | none → 143 |  |
| 145 | **Diseño 1...N** | 2013-04-03 → 2013-05-23 21:30 (+50d) | 2013-04-03 → 2013-06-14 12:30 (+72d) | 1d → 15.46d | 24.75d → -0.79d | none → 134 | was named Diseño |
| 146 | **Diseñar la arquitectura** | 2013-04-03 → 2013-05-23 21:30 (+50d) | 2013-04-03 → 2013-05-28 08:30 (+55d) | 1d → 25.5h | 24.75d → none |  |  |
| 147 | Clasificar los Requisitos No Funcionales | 2013-04-03 → 2013-05-24 07:00 (+51d) | 2013-04-03 → 2013-05-24 12:00 (+51d) | 1d → 5h | 24.75d → -0.79d |  |  |
| 148 | Construir vista de despliegue de nodos | 2013-04-03 → 2013-05-25 15:00 (+52d) | 2013-04-03 → 2013-05-28 18:00 (+55d) | 1d → 15h | 24.75d → -0.79d | none → 147, 150 |  |
| 149 | Construir vista de despliegue de hardware | 2013-04-03 → 2013-05-24 12:00 (+51d) | 2013-04-03 → 2013-05-25 15:00 (+52d) | 1d → 15h | 24.75d → 0.46d | none → 147 |  |
| 150 | Contruir vista de subsistemas e interfaces | 2013-04-03 → 2013-05-24 12:00 (+51d) | 2013-04-03 → 2013-05-25 15:00 (+52d) | 1d → 15h | 24.75d → -0.79d | none → 147 |  |
| 151 | Identificar Patrones de arquitectura a aplicar | 2013-04-03 → 2013-05-24 12:00 (+51d) | 2013-04-03 → 2013-05-25 10:00 (+52d) | 1d → 10h | 24.75d → 0.88d | none → 147 |  |
| 152 | **Realizar Diagrama de Transición de estados** | 2013-04-03 → 2013-06-05 12:30 (+63d) | 2013-04-03 → 2013-06-11 11:30 (+69d) | 1d → 3.92d | 24.75d → 0d |  |  |
| 153 | Identificar Clases con transición de estados | 2013-04-03 → 2013-06-05 12:30 (+63d) | 2013-04-03 → 2013-06-06 07:30 (+64d) | 1d → 7h | 24.75d → 0d |  |  |
| 154 | Identificar estados de las clases | 2013-04-03 → 2013-06-06 07:30 (+64d) | 2013-04-03 → 2013-06-07 15:30 (+65d) | 1d → 20h | 24.75d → 0d | none → 153 |  |
| 155 | Identificar transiciones | 2013-04-03 → 2013-06-07 15:30 (+65d) | 2013-04-03 → 2013-06-08 13:30 (+66d) | 1d → 10h | 24.75d → 0d | none → 154 |  |
| 156 | Realizar diagrama de transición de estados | 2013-04-03 → 2013-06-08 13:30 (+66d) | 2013-04-03 → 2013-06-11 11:30 (+69d) | 1d → 10h | 24.75d → 0d | none → 155 |  |
| 157 | **Estructurar subsistemas de diseño** | 2013-04-03 → 2013-06-05 12:30 (+63d) | 2013-04-03 → 2013-06-11 09:30 (+69d) | 1d → 3.75d | 24.75d → 3.25d |  |  |
| 158 | Identificar subsistemas | 2013-04-03 → 2013-06-05 12:30 (+63d) | 2013-04-03 → 2013-06-06 10:30 (+64d) | 1d → 10h | 24.75d → 3.25d |  |  |
| 159 | Identificar interfaces entre subsistemas | 2013-04-03 → 2013-06-06 10:30 (+64d) | 2013-04-03 → 2013-06-07 13:30 (+65d) | 1d → 15h | 24.75d → 3.25d | none → 158 |  |
| 160 | Establecer relaciones entre subsistemas | 2013-04-03 → 2013-06-07 13:30 (+65d) | 2013-04-03 → 2013-06-08 11:30 (+66d) | 1d → 10h | 24.75d → 3.25d | none → 159 |  |
| 161 | Realizar modelo de diseño | 2013-04-03 → 2013-06-08 11:30 (+66d) | 2013-04-03 → 2013-06-11 09:30 (+69d) | 1d → 10h | 24.75d → 3.25d | none → 160 |  |
| 162 | **Mapeo del Modelo de Objetos a BDR** | 2013-04-03 → 2013-06-11 11:30 (+69d) | 2013-04-03 → 2013-06-14 12:30 (+72d) | 1d → 3.08d | 24.75d → 0d | none → 152 |  |
| 163 | Configurar la herramienta ORM para generar el mapeo automaticamente. | 2013-04-03 → 2013-06-11 11:30 (+69d) | 2013-04-03 → 2013-06-12 09:30 (+70d) | 1d → 10h | 24.75d → 0d |  |  |
| 164 | Codificar las clases utilizando las herramientas brindas por hibernate. | 2013-04-03 → 2013-06-12 09:30 (+70d) | 2013-04-03 → 2013-06-13 17:30 (+71d) | 1d → 20h | 24.75d → 0d | none → 163 |  |
| 165 | Realizar la compilación del proyecto para generar la estructura de la BD a través de la herramienta | 2013-04-03 → 2013-06-13 17:30 (+71d) | 2013-04-03 → 2013-06-14 10:30 (+72d) | 1d → 5h | 24.75d → 0d | none → 164 |  |
| 166 | Generar DER | 2013-04-03 → 2013-06-14 10:30 (+72d) | 2013-04-03 → 2013-06-14 12:30 (+72d) | 1d → 2h | 24.75d → 0d | none → 165 |  |
| 167 | **Implementación 1...N** | 2013-04-03 → 2013-06-14 12:30 (+72d) | 2013-04-03 → 2014-03-15 07:30 (+346d) | 1d → 194.58d | 24.75d → 0d | none → 145 | was named Implementación |
| 168 | **Implementar la arquitectura** | 2013-04-03 → 2013-06-14 12:30 (+72d) | 2013-04-03 → 2013-06-19 11:30 (+77d) | 1d → 2.92d | 24.75d → 191.67d |  |  |
| 169 | Identificar componentes relevantes para la arquitectura | 2013-04-03 → 2013-06-14 12:30 (+72d) | 2013-04-03 → 2013-06-18 08:30 (+76d) | 1d → 20h | 24.75d → 191.67d |  |  |
| 170 | Asignar componentes a nodos | 2013-04-03 → 2013-06-18 08:30 (+76d) | 2013-04-03 → 2013-06-19 11:30 (+77d) | 1d → 15h | 24.75d → 191.67d | none → 169 |  |
| 171 | **Integrar sistema** | 2013-04-03 → 2014-02-26 08:30 (+329d) | 2013-04-03 → 2014-03-15 07:30 (+346d) | 1d → 12.92d | 24.75d → 0d | none → 185 |  |
| 172 | Definir construcciones a integrar | 2013-04-03 → 2014-02-26 08:30 (+329d) | 2013-04-03 → 2014-02-28 14:30 (+331d) | 1d → 30h | 24.75d → 0d |  |  |
| 173 | Comprobar compatibilidad de construcciones | 2013-04-03 → 2014-02-28 14:30 (+331d) | 2013-04-03 → 2014-03-01 12:30 (+332d) | 1d → 10h | 24.75d → 0d | none → 172 |  |
| 174 | Crear plan de integración de construcción | 2013-04-03 → 2014-03-01 12:30 (+332d) | 2013-04-03 → 2014-03-04 15:30 (+335d) | 1d → 15h | 24.75d → 0d | none → 173 |  |
| 175 | Integrar construcciones de sistema | 2013-04-03 → 2014-03-04 15:30 (+335d) | 2013-04-03 → 2014-03-15 07:30 (+346d) | 1d → 100h | 24.75d → 0d | none → 174 |  |
| 176 | **Implementar subsistema** | 2013-04-03 → 2013-10-02 16:30 (+182d) | 2013-04-03 → 2014-02-13 16:30 (+316d) | 1d → 95d | 24.75d → 0d | none → 180 |  |
| 177 | Definir objetivos y alcances del subsistema | 2013-04-03 → 2013-10-02 16:30 (+182d) | 2013-04-03 → 2013-10-08 08:30 (+188d) | 1d → 40h | 24.75d → 0d |  |  |
| 178 | Implementar subsistema en la construcción actual | 2013-04-03 → 2013-10-08 08:30 (+188d) | 2013-04-03 → 2014-02-01 12:30 (+304d) | 1d → 1000h | 24.75d → 0d | none → 177 |  |
| 179 | Mantener los contenidos del subsistema | 2013-04-03 → 2014-02-01 12:30 (+304d) | 2013-04-03 → 2014-02-13 16:30 (+316d) | 1d → 100h | 24.75d → 0d | none → 178 |  |
| 180 | **Implementar clase** | 2013-04-03 → 2013-06-14 12:30 (+72d) | 2013-04-03 → 2013-10-02 16:30 (+182d) | 1d → 78.33d | 24.75d → 0d |  |  |
| 181 | Identificar clases de diseño a implementar | 2013-04-03 → 2013-06-14 12:30 (+72d) | 2013-04-03 → 2013-06-21 12:30 (+79d) | 1d → 60h | 24.75d → 0d |  |  |
| 182 | Generar código a partir de las clases de diseño | 2013-04-03 → 2013-06-21 12:30 (+79d) | 2013-04-03 → 2013-07-30 08:30 (+118d) | 1d → 320h | 24.75d → 0d | none → 181 |  |
| 183 | Implementar operaciones correspondientes en cada clase | 2013-04-03 → 2013-07-30 08:30 (+118d) | 2013-04-03 → 2013-09-25 16:30 (+175d) | 1d → 500h | 24.75d → 0d | none → 182 |  |
| 184 | Comprobar que las clases implementan las interfaces correspondientes | 2013-04-03 → 2013-09-25 16:30 (+175d) | 2013-04-03 → 2013-10-02 16:30 (+182d) | 1d → 60h | 24.75d → 0d | none → 183 |  |
| 185 | **Realizar pruebas de unidad** | 2013-04-03 → 2014-02-13 16:30 (+316d) | 2013-04-03 → 2014-02-26 08:30 (+329d) | 1d → 8.33d | 24.75d → 0d | none → 176 |  |
| 186 | Realizar plan de pruebas de unidad | 2013-04-03 → 2014-02-13 16:30 (+316d) | 2013-04-03 → 2014-02-15 12:30 (+318d) | 1d → 20h | 24.75d → 0d |  |  |
| 187 | Diseñar pruebas de caja negra, caja blanca y basadas en estados según corresponda | 2013-04-03 → 2014-02-15 12:30 (+318d) | 2013-04-03 → 2014-02-20 16:30 (+323d) | 1d → 40h | 24.75d → 0d | none → 186 |  |
| 188 | Realizar pruebas de unidad | 2013-04-03 → 2014-02-20 16:30 (+323d) | 2013-04-03 → 2014-02-22 12:30 (+325d) | 1d → 20h | 24.75d → 0d | none → 187 |  |
| 189 | Documentar resultados | 2013-04-03 → 2014-02-22 12:30 (+325d) | 2013-04-03 → 2014-02-26 08:30 (+329d) | 1d → 20h | 24.75d → 0d | none → 188 |  |
| 190 | **Prueba 1...N** | 2013-04-03 → 2014-03-15 07:30 (+346d) | 2013-04-03 → 2014-04-09 17:30 (+371d) | 1d → 17.83d | 24.75d → 0d | none → 167 | was named Prueba |
| 191 | **Planificar pruebas** | 2013-04-03 → 2014-03-15 07:30 (+346d) | 2013-04-03 → 2014-03-18 15:30 (+349d) | 1d → 1.67d | 24.75d → 0d |  |  |
| 192 | Describir estrategia de prueba | 2013-04-03 → 2014-03-15 07:30 (+346d) | 2013-04-03 → 2014-03-15 17:30 (+346d) | 1d → 10h | 24.75d → 0d |  |  |
| 193 | Estimar los recursos para la prueba | 2013-04-03 → 2014-03-15 17:30 (+346d) | 2013-04-03 → 2014-03-18 10:30 (+349d) | 1d → 5h | 24.75d → 0d | none → 192 |  |
| 194 | Planificar el esfuerzo de la prueba | 2013-04-03 → 2014-03-18 10:30 (+349d) | 2013-04-03 → 2014-03-18 15:30 (+349d) | 1d → 5h | 24.75d → 0d | none → 193 |  |
| 195 | **Diseñar pruebas** | 2013-04-03 → 2014-03-18 15:30 (+349d) | 2013-04-03 → 2014-03-28 09:30 (+359d) | 1d → 7.5d | 24.75d → 0d | none → 191 |  |
| 196 | Identificar casos de prueba | 2013-04-03 → 2014-03-18 15:30 (+349d) | 2013-04-03 → 2014-03-19 13:30 (+350d) | 1d → 10h | 24.75d → 0d |  |  |
| 197 | Describir casos de prueba | 2013-04-03 → 2014-03-19 13:30 (+350d) | 2013-04-03 → 2014-03-22 07:30 (+353d) | 1d → 30h | 24.75d → 0d | none → 196 |  |
| 198 | Estructurar procedimiento de prueba | 2013-04-03 → 2014-03-22 07:30 (+353d) | 2013-04-03 → 2014-03-28 09:30 (+359d) | 1d → 50h | 24.75d → 0d | none → 197 |  |
| 199 | **Automatizar pruebas** | 2013-04-03 → 2014-03-18 15:30 (+349d) | 2013-04-03 → 2014-03-25 15:30 (+356d) | 1d → 5d | 24.75d → 2.5d | none → 191 |  |
| 200 | Identificar procedimientos de prueba automatizables | 2013-04-03 → 2014-03-18 15:30 (+349d) | 2013-04-03 → 2014-03-20 11:30 (+351d) | 1d → 20h | 24.75d → 2.5d |  |  |
| 201 | Crear componente de prueba | 2013-04-03 → 2014-03-20 11:30 (+351d) | 2013-04-03 → 2014-03-25 15:30 (+356d) | 1d → 40h | 24.75d → 2.5d | none → 200 |  |
| 202 | **Realizar pruebas** | 2013-04-03 → 2014-03-28 09:30 (+359d) | 2013-04-03 → 2014-04-08 10:30 (+370d) | 1d → 7.08d | 24.75d → 0d | none → 195, 199 |  |
| 203 | Realizar pruebas de integración | 2013-04-03 → 2014-03-28 09:30 (+359d) | 2013-04-03 → 2014-04-01 15:30 (+363d) | 1d → 30h | 24.75d → 4.17d |  |  |
| 204 | Realizar pruebas de sistema | 2013-04-03 → 2014-03-28 09:30 (+359d) | 2013-04-03 → 2014-04-05 17:30 (+367d) | 1d → 80h | 24.75d → 0d |  |  |
| 205 | Registrar resultados de pruebas | 2013-04-03 → 2014-04-05 17:30 (+367d) | 2013-04-03 → 2014-04-08 10:30 (+370d) | 1d → 5h | 24.75d → 0d | none → 203, 204 |  |
| 206 | **Evaluar pruebas** | 2013-04-03 → 2014-04-08 10:30 (+370d) | 2013-04-03 → 2014-04-09 17:30 (+371d) | 1d → 1.58d | 24.75d → 0d | none → 202 |  |
| 207 | Evaluar esfuerzos de prueba | 2013-04-03 → 2014-04-08 10:30 (+370d) | 2013-04-03 → 2014-04-08 15:30 (+370d) | 1d → 5h | 24.75d → 0d |  |  |
| 208 | Comparar resultados con los objetivos establecidos en el plan de pruebas | 2013-04-03 → 2014-04-08 15:30 (+370d) | 2013-04-03 → 2014-04-09 07:30 (+371d) | 1d → 4h | 24.75d → 0d | none → 207 |  |
| 209 | Establecer métricas y fiabilidad del sistema | 2013-04-03 → 2014-04-09 07:30 (+371d) | 2013-04-03 → 2014-04-09 17:30 (+371d) | 1d → 10h | 24.75d → 0d | none → 208 |  |
| 210 | **Distribución del SW** | 2013-04-03 → 2014-04-09 17:30 (+371d) | 2013-04-03 → 2014-04-15 14:30 (+377d) | 1d → 3.75d | 24.75d → 0d | none → 190 |  |

| ID | Task | Start | Finish | Duration | Total float | Predecessors |
| --- | --- | --- | --- | --- | --- | --- |
| 211 | **Planificar la distribución** | 2013-04-03 → 2014-04-09 17:30 (+371d) | 2013-04-03 → 2014-04-10 16:30 (+372d) | 1d → 0.92d | 24.75d → 2.83d |  |
| 212 | Definir fecha de instalación del sistema | 2013-04-03 → 2014-04-09 17:30 (+371d) | 2013-04-03 → 2014-04-10 09:30 (+372d) | 1d → 4h | 24.75d → 3d |  |
| 213 | Definir lugar y fecha de capacitaciones | 2013-04-03 → 2014-04-09 17:30 (+371d) | 2013-04-03 → 2014-04-10 11:30 (+372d) | 1d → 6h | 24.75d → 2.83d |  |
| 214 | Definir recursos asignados a la distribución | 2013-04-03 → 2014-04-10 11:30 (+372d) | 2013-04-03 → 2014-04-10 16:30 (+372d) | 1d → 5h | 24.75d → 2.83d | none → 212, 213 |
| 215 | **Producir unidad de distribución** | 2013-04-03 → 2014-04-09 17:30 (+371d) | 2013-04-03 → 2014-04-12 16:30 (+374d) | 1d → 2.92d | 24.75d → 0.83d |  |
| 216 | Definir forma de entrega del SW | 2013-04-03 → 2014-04-09 17:30 (+371d) | 2013-04-03 → 2014-04-10 10:30 (+372d) | 1d → 5h | 24.75d → 0.83d |  |
| 217 | Identificar los artefactos necesarios para instalar y usar el sistema | 2013-04-03 → 2014-04-10 10:30 (+372d) | 2013-04-03 → 2014-04-11 08:30 (+373d) | 1d → 10h | 24.75d → 0.83d | none → 216 |
| 218 | Empaquetar el producto | 2013-04-03 → 2014-04-11 08:30 (+373d) | 2013-04-03 → 2014-04-12 16:30 (+374d) | 1d → 20h | 24.75d → 0.83d | none → 217 |
| 219 | **Efectuar capacitaciones** | 2013-04-03 → 2014-04-09 17:30 (+371d) | 2013-04-03 → 2014-04-15 14:30 (+377d) | 1d → 3.75d | 24.75d → 0d |  |
| 220 | Confeccionar Material de Soporte | 2013-04-03 → 2014-04-09 17:30 (+371d) | 2013-04-03 → 2014-04-12 11:30 (+374d) | 1d → 30h | 24.75d → 0d |  |
| 221 | Organizar capacitaciones | 2013-04-03 → 2014-04-09 17:30 (+371d) | 2013-04-03 → 2014-04-11 08:30 (+373d) | 1d → 15h | 24.75d → 1.25d |  |
| 222 | Realizar las capacitaciones correspondientes | 2013-04-03 → 2014-04-12 11:30 (+374d) | 2013-04-03 → 2014-04-15 09:30 (+377d) | 1d → 10h | 24.75d → 0d | none → 220, 221 |
| 223 | Evaluar la capacitacion | 2013-04-03 → 2014-04-15 09:30 (+377d) | 2013-04-03 → 2014-04-15 14:30 (+377d) | 1d → 5h | 24.75d → 0d | none → 222 |
| 224 | **Nivel de Esfuerzo** | 2013-04-03 → 2013-04-03 08:00 | 2013-04-03 → 2013-04-20 12:00 (+17d) | 1d → 13.33d | 24.75d → 255.21d |  |
| 225 | **Organización de reuniones** | 2013-04-03 → 2013-04-03 08:00 | 2013-04-03 → 2013-04-05 19:00 (+2d) | 1d → 2.92d | 24.75d → 265.62d |  |
| 226 | Establecer lugar, fecha y hora de reunión | 2013-04-03 → 2013-04-03 08:00 | 2013-04-03 → 2013-04-03 13:00 | 1d → 5h | 24.75d → 265.62d |  |
| 227 | Asistir a la reunión | 2013-04-03 → 2013-04-03 13:00 | 2013-04-03 → 2013-04-05 09:00 (+2d) | 1d → 20h | 24.75d → 265.62d | none → 226 |
| 228 | Documentar temas tratados | 2013-04-03 → 2013-04-05 09:00 (+2d) | 2013-04-03 → 2013-04-05 19:00 (+2d) | 1d → 10h | 24.75d → 265.62d | none → 227 |
| 229 | **Presentaciones** | 2013-04-03 → 2013-04-03 08:00 | 2013-04-03 → 2013-04-09 10:00 (+6d) | 1d → 4.17d | 24.75d → 264.38d |  |
| 230 | Definir temas a presentar | 2013-04-03 → 2013-04-03 08:00 | 2013-04-03 → 2013-04-04 11:00 (+1d) | 1d → 15h | 24.75d → 264.38d |  |
| 231 | Estructurar presentación | 2013-04-03 → 2013-04-04 11:00 (+1d) | 2013-04-03 → 2013-04-05 19:00 (+2d) | 1d → 20h | 24.75d → 264.38d | none → 230 |
| 232 | Llevar a cabo la presentación | 2013-04-03 → 2013-04-06 07:00 (+3d) | 2013-04-03 → 2013-04-09 10:00 (+6d) | 1d → 15h | 24.75d → 264.38d | none → 231 |
| 233 | **Investigaciones** | 2013-04-03 → 2013-04-03 08:00 | 2013-04-03 → 2013-04-20 12:00 (+17d) | 1d → 13.33d | 24.75d → 255.21d |  |
| 234 | Definir temas a investigar | 2013-04-03 → 2013-04-03 08:00 | 2013-04-03 → 2013-04-03 18:00 | 1d → 10h | 24.75d → 255.21d |  |
| 235 | Buscar material relevante | 2013-04-03 → 2013-04-03 18:00 | 2013-04-03 → 2013-04-10 08:00 (+7d) | 1d → 50h | 24.75d → 255.21d | none → 234 |
| 236 | Asimilar los conocimientos (teórica y prácticamente) | 2013-04-03 → 2013-04-10 08:00 (+7d) | 2013-04-03 → 2013-04-20 12:00 (+17d) | 1d → 100h | 24.75d → 255.21d | none → 235 |

## Version 4 (saved 2013-08-17)

Note of the change: Corrección de lo señalado por la profe en algunos documentos (WBS, Diccionario WBS, Scope statement)

Last finish stays 2014-04-15.

Added:

| ID | Task | Duration | Start | Finish | Predecessors |
| --- | --- | --- | --- | --- | --- |
| 67 | Comunicación | 12h? | 2013-04-03 08:00 | 2013-04-04 08:00 |  |
| 68 | Costo | 12h? | 2013-04-03 08:00 | 2013-04-04 08:00 |  |
| 69 | Calidad | 12h? | 2013-04-03 08:00 | 2013-04-04 08:00 |  |
| 240 | **Informes** | 5d | 2013-04-03 08:00 | 2013-04-10 08:00 |  |
| 241 | Diseñar documento que sirva como plantilla de estructura y estilo para los informes | 3h | 2013-04-03 08:00 | 2013-04-03 11:00 |  |
| 242 | Estructurar la información pertinente al informe | 30h | 2013-04-03 08:00 | 2013-04-05 14:00 |  |
| 243 | Estructurar el informe | 10h | 2013-04-05 14:00 | 2013-04-06 12:00 | 241, 242 |
| 244 | Realizar una revisión del mismo | 5h | 2013-04-06 12:00 | 2013-04-06 17:00 | 243 |
| 245 | Realizar correcciones en caso de que corresponda | 15h | 2013-04-06 17:00 | 2013-04-10 08:00 | 244 |

Changed:

| ID | Task | Duration | Other |
| --- | --- | --- | --- |
| 1 | **Proyecto: S.A.P.O.** | 268.54d → 268.54d? |  |
| 2 | **Gestión de Proyecto** | 96.83d → 96.83d? |  |
| 37 | **Riesgos** | 5.92d → 6.17d |  |
| 138 | **Realización de casos de uso esenciales** | 56.5h → 59h |  |
| 149 | **Diseñar la arquitectura** | 25.5h → 28h |  |
| 222 | **Capacitaciones** |  | was named Efectuar capacitaciones |

## Version 5 (saved 2013-10-08)

Note of the change: Se agrega el WP Estructurar Modelo de casos de uso de Negocio

Last finish 2014-04-15 → 2014-04-12 (-3d).

Added:

| ID | Task | Duration | Start | Finish | Predecessors |
| --- | --- | --- | --- | --- | --- |
| 99 | **Estructurar Modelo de casos de uso de Negocio** | 2.08d | 2013-05-04 18:00 | 2013-05-08 19:00 | 91 |
| 100 | Identificar y describir actores del negocio | 4h | 2013-05-04 18:00 | 2013-05-07 10:00 |  |
| 101 | Identificar relaciones entre actores del negocio | 2h | 2013-05-04 18:00 | 2013-05-07 08:00 |  |
| 102 | Identificar Casos de Uso del negocio | 25h | 2013-05-04 18:00 | 2013-05-08 19:00 |  |
| 103 | Identificar relaciones entre Casos de Uso de neogocio | 10h | 2013-05-04 18:00 | 2013-05-07 16:00 |  |
| 104 | Construir diagrama de caso de uso de negocio | 8h | 2013-05-04 18:00 | 2013-05-07 14:00 |  |
| 105 | Confeccionar documento del Modelo de Negocio | 10h | 2013-05-04 18:00 | 2013-05-07 16:00 |  |

Changed:

| ID | Task | Start | Finish | Duration | Total float | Predecessors |
| --- | --- | --- | --- | --- | --- | --- |
| 1 | **Proyecto: S.A.P.O.** |  | 2014-04-15 14:30 → 2014-04-12 13:30 (-3d) | 268.54d? → 267.46d? | -18.04d → -12d |  |
| 70 | **Producto** |  | 2014-04-15 14:30 → 2014-04-12 13:30 (-3d) | 268.54d → 267.46d | -18.04d → -12d |  |
| 71 | **Relevamiento** |  | 2013-05-07 13:30 → 2013-05-08 19:00 (+1d) | 24.46d → 25.92d | -18.04d → -12d |  |
| 106 | **Aceptación del Cliente** | 2013-05-04 18:00 → 2013-04-03 08:00 (-31d) | 2013-05-07 13:30 → 2013-04-03 15:30 (-34d) |  | -18.04d → 13.29d | 91 → none |
| 107 | Enviar la documentación del proceso de negocio al cliente | 2013-05-04 18:00 → 2013-04-03 08:00 (-31d) | 2013-05-04 19:00 → 2013-04-03 09:00 (-31d) |  | -18.04d → 13.29d |  |
| 108 | Evaluar retroalimentación del cliente | 2013-05-07 07:00 → 2013-04-03 09:00 (-34d) | 2013-05-07 11:00 → 2013-04-03 13:00 (-34d) |  | -18.04d → 13.29d |  |
| 109 | Actualizar documentación | 2013-05-07 11:00 → 2013-04-03 13:00 (-34d) | 2013-05-07 13:00 → 2013-04-03 15:00 (-34d) |  | -18.04d → 13.29d |  |
| 110 | Registrar aprobacion del cliente | 2013-05-07 13:00 → 2013-04-03 15:00 (-34d) | 2013-05-07 13:30 → 2013-04-03 15:30 (-34d) |  | -18.04d → 13.29d |  |
| 111 | **Requerimiento 1...N** | 2013-05-07 13:30 → 2013-05-09 07:00 (+2d) | 2013-05-31 18:30 → 2013-05-23 18:00 (-8d) | 18.42d → 10.92d | -18.04d → -12d |  |
| 112 | **Especificar requerimientos del sistema** | 2013-05-07 13:30 → 2013-05-09 07:00 (+2d) | 2013-05-11 10:30 → 2013-05-14 16:00 (+3d) |  | -18.04d → -12d |  |
| 113 | Identificar requerimientos globales de la organización | 2013-05-07 13:30 → 2013-05-09 07:00 (+2d) | 2013-05-07 18:30 → 2013-05-09 12:00 (+2d) |  | -18.04d → -12d |  |
| 114 | Identificar requerimientos detallados de la organización | 2013-05-07 18:30 → 2013-05-09 12:00 (+2d) | 2013-05-09 14:30 → 2013-05-11 08:00 (+2d) |  | -18.04d → -12d |  |
| 115 | Realizar descripción de requerimientos funcionales | 2013-05-09 14:30 → 2013-05-11 08:00 (+2d) | 2013-05-11 10:30 → 2013-05-14 16:00 (+3d) |  | -18.04d → -12d |  |
| 116 | Realizar descripción de requerimientos no funcionales | 2013-05-09 14:30 → 2013-05-11 08:00 (+2d) | 2013-05-10 12:30 → 2013-05-11 18:00 (+1d) |  | -17.21d → -11.17d |  |
| 117 | **Estructurar modelo de casos de uso del sistema** | 2013-05-11 10:30 → 2013-05-14 16:00 (+3d) | 2013-05-31 18:30 → 2013-05-23 18:00 (-8d) | 14.67d → 7.17d | -18.04d → -12d |  |
| 118 | Identificar y describir actores | 2013-05-11 10:30 → 2013-05-14 16:00 (+3d) | 2013-05-11 14:30 → 2013-05-15 08:00 (+4d) |  | -18.04d → -12d |  |
| 119 | Identificar relaciones entre los actores | 2013-05-11 14:30 → 2013-05-15 08:00 (+4d) | 2013-05-11 16:30 → 2013-05-15 10:00 (+4d) |  | -18.04d → -12d |  |
| 120 | Identificar Casos de Uso del sistema | 2013-05-11 16:30 → 2013-05-15 10:00 (+4d) | 2013-05-16 10:30 → 2013-05-17 16:00 (+1d) |  | -18.04d → -12d |  |
| 121 | Describir objetivos de casos de uso del sistema | 2013-05-16 10:30 → 2013-05-17 16:00 (+1d) | 2013-05-21 14:30 → 2013-05-23 08:00 (+2d) |  | -18.04d → -12d |  |
| 122 | Describir trazo grueso de casos de uso del sistema | 2013-05-16 10:30 → 2013-05-17 16:00 (+1d) | 2013-05-16 17:30 → 2013-05-18 11:00 (+2d) |  | -8.62d → -10.08d |  |
| 123 | Describir trazo fino de CU esenciales del sistema | 2013-05-16 10:30 → 2013-05-17 16:00 (+1d) | 2013-05-22 12:30 → 2013-05-23 18:00 (+1d) |  | -10.54d → -12d |  |
| 124 | Identificar relaciones entre casos de uso | 2013-05-21 14:30 → 2013-05-23 08:00 (+2d) | 2013-05-31 18:30 → 2013-05-23 18:00 (-8d) | 100h → 10h | -18.04d → -12d |  |
| 125 | Construir diagramas de caso de uso del sistema | 2013-05-16 17:30 → 2013-05-18 11:00 (+2d) | 2013-05-17 15:30 → 2013-05-21 09:00 (+4d) |  | -8.62d → -10.08d |  |
| 126 | Confeccionar documento de especificación de requerimiento del software | 2013-05-17 15:30 → 2013-05-21 09:00 (+4d) | 2013-05-18 13:30 → 2013-05-21 19:00 (+3d) |  | -8.62d → -10.08d |  |
| 127 | **Realizar modelo de objetos del dominio del problema(MODP)** | 2013-05-11 10:30 → 2013-05-14 16:00 (+3d) | 2013-05-21 08:30 → 2013-05-22 14:00 (+1d) |  | -9.21d → -10.67d |  |
| 128 | Identificar clases del dominio | 2013-05-11 10:30 → 2013-05-14 16:00 (+3d) | 2013-05-14 13:30 → 2013-05-15 19:00 (+1d) |  | -9.21d → -10.67d |  |
| 129 | Identificar atributos y métodos de clase | 2013-05-14 13:30 → 2013-05-16 07:00 (+2d) | 2013-05-17 07:30 → 2013-05-18 13:00 (+1d) |  | -9.21d → -10.67d |  |
| 130 | Identificar relaciones entre clases | 2013-05-17 07:30 → 2013-05-18 13:00 (+1d) | 2013-05-17 17:30 → 2013-05-21 11:00 (+4d) |  | -9.21d → -10.67d |  |
| 131 | Confecionar el diagrama de clases | 2013-05-17 17:30 → 2013-05-21 11:00 (+4d) | 2013-05-21 08:30 → 2013-05-22 14:00 (+1d) |  | -9.21d → -10.67d |  |
| 132 | **Construir prototipo de interfaz** | 2013-05-07 13:30 → 2013-05-09 07:00 (+2d) | 2013-05-11 13:30 → 2013-05-14 19:00 (+3d) |  | -3.62d → -5.08d |  |
| 133 | Definir un template para la interfaz y prototipos de interfaz | 2013-05-07 13:30 → 2013-05-09 07:00 (+2d) | 2013-05-08 16:30 → 2013-05-10 10:00 (+2d) |  | -3.62d → -5.08d |  |
| 134 | Identificar los casos de uso del sistema que requieren prototipos de interfaz | 2013-05-08 16:30 → 2013-05-10 10:00 (+2d) | 2013-05-08 18:30 → 2013-05-10 12:00 (+2d) |  | -3.62d → -5.08d |  |
| 135 | Definir los datos necesarios para cada interfaz | 2013-05-08 18:30 → 2013-05-10 12:00 (+2d) | 2013-05-09 12:30 → 2013-05-10 18:00 (+1d) |  | -3.62d → -5.08d |  |
| 136 | Diseñar interfaces de cada caso de uso identificado | 2013-05-09 12:30 → 2013-05-10 18:00 (+1d) | 2013-05-11 08:30 → 2013-05-14 14:00 (+3d) |  | -3.62d → -5.08d |  |
| 137 | Definir y diseñar navegabilidad de las interfaces | 2013-05-11 08:30 → 2013-05-14 14:00 (+3d) | 2013-05-11 11:30 → 2013-05-14 17:00 (+3d) |  | -3.62d → -5.08d |  |
| 138 | Recorrer el flujo de trabajo de cada caso de uso mediante las interfaces | 2013-05-11 11:30 → 2013-05-14 17:00 (+3d) | 2013-05-11 13:30 → 2013-05-14 19:00 (+3d) |  | -3.62d → -5.08d |  |
| 139 | **Validación del Cliente** | 2013-05-07 13:30 → 2013-05-09 07:00 (+2d) | 2013-05-10 15:30 → 2013-05-14 09:00 (+4d) |  | -2.79d → -4.25d |  |
| 140 | Organizar reunión con el cliente | 2013-05-07 13:30 → 2013-05-09 07:00 (+2d) | 2013-05-08 07:30 → 2013-05-09 13:00 (+1d) |  | -2.79d → -4.25d |  |
| 141 | Presentar casos de uso identificados y evaluar su validez | 2013-05-08 07:30 → 2013-05-09 13:00 (+1d) | 2013-05-09 15:30 → 2013-05-11 09:00 (+2d) |  | -2.79d → -4.25d |  |
| 142 | Validar CU esenciales recorriendo los diferentes escenarios mediante las interfaces gráficas | 2013-05-09 15:30 → 2013-05-11 09:00 (+2d) | 2013-05-10 13:30 → 2013-05-11 19:00 (+1d) |  | -2.79d → -4.25d |  |
| 143 | Registrar aportes y modificaciones hechas por el cliente | 2013-05-10 13:30 → 2013-05-14 07:00 (+4d) | 2013-05-10 15:30 → 2013-05-14 09:00 (+4d) |  | -2.79d → -4.25d |  |
| 144 | **Análisis 1...N** |  | 2013-06-05 12:30 → 2013-06-04 11:30 (-1d) | 13.17d → 12.08d |  |  |
| 150 | **Estructurar artefactos de análisis en paquetes de análisis** | 2013-05-31 18:30 → 2013-05-23 18:00 (-8d) | 2013-06-05 12:30 → 2013-05-28 12:00 (-8d) |  | -9.25d → -3.21d |  |
| 151 | Identificar clases con alta cohesión | 2013-05-31 18:30 → 2013-05-23 18:00 (-8d) | 2013-06-01 14:30 → 2013-05-24 14:00 (-8d) |  | -9.25d → -3.21d |  |
| 152 | Estructurar las clases en paquetes de análisis | 2013-06-01 14:30 → 2013-05-24 14:00 (-8d) | 2013-06-04 14:30 → 2013-05-25 14:00 (-10d) |  | -9.25d → -3.21d |  |
| 153 | Identificar relaciones entre paquetes de análisis | 2013-06-04 14:30 → 2013-05-25 14:00 (-10d) | 2013-06-05 08:30 → 2013-05-28 08:00 (-8d) |  | -9.25d → -3.21d |  |
| 154 | Verificar los paquetes buscando alta cohesión entre sus componentes y bajo acoplamiento con otros paquetes | 2013-06-05 08:30 → 2013-05-28 08:00 (-8d) | 2013-06-05 12:30 → 2013-05-28 12:00 (-8d) |  | -9.25d → -3.21d |  |
| 155 | **Diseño 1...N** |  | 2013-06-14 12:30 → 2013-06-13 11:30 (-1d) | 15.46d → 14.38d |  |  |
| 162 | **Realizar Diagrama de Transición de estados** | 2013-06-05 12:30 → 2013-06-04 11:30 (-1d) | 2013-06-11 11:30 → 2013-06-08 10:30 (-3d) |  |  |  |
| 163 | Identificar Clases con transición de estados | 2013-06-05 12:30 → 2013-06-04 11:30 (-1d) | 2013-06-06 07:30 → 2013-06-04 18:30 (-2d) |  |  |  |
| 164 | Identificar estados de las clases | 2013-06-06 07:30 → 2013-06-04 18:30 (-2d) | 2013-06-07 15:30 → 2013-06-06 14:30 (-1d) |  |  |  |
| 165 | Identificar transiciones | 2013-06-07 15:30 → 2013-06-06 14:30 (-1d) | 2013-06-08 13:30 → 2013-06-07 12:30 (-1d) |  |  |  |
| 166 | Realizar diagrama de transición de estados | 2013-06-08 13:30 → 2013-06-07 12:30 (-1d) | 2013-06-11 11:30 → 2013-06-08 10:30 (-3d) |  |  |  |
| 167 | **Estructurar subsistemas de diseño** | 2013-06-05 12:30 → 2013-06-04 11:30 (-1d) | 2013-06-11 09:30 → 2013-06-08 08:30 (-3d) |  |  |  |
| 168 | Identificar subsistemas | 2013-06-05 12:30 → 2013-06-04 11:30 (-1d) | 2013-06-06 10:30 → 2013-06-05 09:30 (-1d) |  |  |  |
| 169 | Identificar interfaces entre subsistemas | 2013-06-06 10:30 → 2013-06-05 09:30 (-1d) | 2013-06-07 13:30 → 2013-06-06 12:30 (-1d) |  |  |  |
| 170 | Establecer relaciones entre subsistemas | 2013-06-07 13:30 → 2013-06-06 12:30 (-1d) | 2013-06-08 11:30 → 2013-06-07 10:30 (-1d) |  |  |  |
| 171 | Realizar modelo de diseño | 2013-06-08 11:30 → 2013-06-07 10:30 (-1d) | 2013-06-11 09:30 → 2013-06-08 08:30 (-3d) |  |  |  |
| 172 | **Mapeo del Modelo de Objetos a BDR** | 2013-06-11 11:30 → 2013-06-08 10:30 (-3d) | 2013-06-14 12:30 → 2013-06-13 11:30 (-1d) |  |  |  |
| 173 | Configurar la herramienta ORM para generar el mapeo automaticamente. | 2013-06-11 11:30 → 2013-06-08 10:30 (-3d) | 2013-06-12 09:30 → 2013-06-11 08:30 (-1d) |  |  |  |
| 174 | Codificar las clases utilizando las herramientas brindas por hibernate. | 2013-06-12 09:30 → 2013-06-11 08:30 (-1d) | 2013-06-13 17:30 → 2013-06-12 16:30 (-1d) |  |  |  |
| 175 | Realizar la compilación del proyecto para generar la estructura de la BD a través de la herramienta | 2013-06-13 17:30 → 2013-06-12 16:30 (-1d) | 2013-06-14 10:30 → 2013-06-13 09:30 (-1d) |  |  |  |
| 176 | Generar DER | 2013-06-14 10:30 → 2013-06-13 09:30 (-1d) | 2013-06-14 12:30 → 2013-06-13 11:30 (-1d) |  |  |  |
| 177 | **Implementación 1...N** | 2013-06-14 12:30 → 2013-06-13 11:30 (-1d) | 2014-03-15 07:30 → 2014-03-13 18:30 (-2d) |  |  |  |
| 178 | **Implementar la arquitectura** | 2013-06-14 12:30 → 2013-06-13 11:30 (-1d) | 2013-06-19 11:30 → 2013-06-18 10:30 (-1d) |  |  |  |
| 179 | Identificar componentes relevantes para la arquitectura | 2013-06-14 12:30 → 2013-06-13 11:30 (-1d) | 2013-06-18 08:30 → 2013-06-15 07:30 (-3d) |  |  |  |
| 180 | Asignar componentes a nodos | 2013-06-18 08:30 → 2013-06-15 07:30 (-3d) | 2013-06-19 11:30 → 2013-06-18 10:30 (-1d) |  |  |  |
| 181 | **Integrar sistema** | 2014-02-26 08:30 → 2014-02-25 07:30 (-1d) | 2014-03-15 07:30 → 2014-03-13 18:30 (-2d) |  |  |  |
| 182 | Definir construcciones a integrar | 2014-02-26 08:30 → 2014-02-25 07:30 (-1d) | 2014-02-28 14:30 → 2014-02-27 13:30 (-1d) |  |  |  |
| 183 | Comprobar compatibilidad de construcciones | 2014-02-28 14:30 → 2014-02-27 13:30 (-1d) | 2014-03-01 12:30 → 2014-02-28 11:30 (-1d) |  |  |  |

| ID | Task | Start | Finish |
| --- | --- | --- | --- |
| 184 | Crear plan de integración de construcción | 2014-03-01 12:30 → 2014-02-28 11:30 (-1d) | 2014-03-04 15:30 → 2014-03-01 14:30 (-3d) |
| 185 | Integrar construcciones de sistema | 2014-03-04 15:30 → 2014-03-01 14:30 (-3d) | 2014-03-15 07:30 → 2014-03-13 18:30 (-2d) |
| 186 | **Implementar subsistema** | 2013-10-02 16:30 → 2013-10-01 15:30 (-1d) | 2014-02-13 16:30 → 2014-02-12 15:30 (-1d) |
| 187 | Definir objetivos y alcances del subsistema | 2013-10-02 16:30 → 2013-10-01 15:30 (-1d) | 2013-10-08 08:30 → 2013-10-05 07:30 (-3d) |
| 188 | Implementar subsistema en la construcción actual | 2013-10-08 08:30 → 2013-10-05 07:30 (-3d) | 2014-02-01 12:30 → 2014-01-31 11:30 (-1d) |
| 189 | Mantener los contenidos del subsistema | 2014-02-01 12:30 → 2014-01-31 11:30 (-1d) | 2014-02-13 16:30 → 2014-02-12 15:30 (-1d) |
| 190 | **Implementar clase** | 2013-06-14 12:30 → 2013-06-13 11:30 (-1d) | 2013-10-02 16:30 → 2013-10-01 15:30 (-1d) |
| 191 | Identificar clases de diseño a implementar | 2013-06-14 12:30 → 2013-06-13 11:30 (-1d) | 2013-06-21 12:30 → 2013-06-20 11:30 (-1d) |
| 192 | Generar código a partir de las clases de diseño | 2013-06-21 12:30 → 2013-06-20 11:30 (-1d) | 2013-07-30 08:30 → 2013-07-27 07:30 (-3d) |
| 193 | Implementar operaciones correspondientes en cada clase | 2013-07-30 08:30 → 2013-07-27 07:30 (-3d) | 2013-09-25 16:30 → 2013-09-24 15:30 (-1d) |
| 194 | Comprobar que las clases implementan las interfaces correspondientes | 2013-09-25 16:30 → 2013-09-24 15:30 (-1d) | 2013-10-02 16:30 → 2013-10-01 15:30 (-1d) |
| 195 | **Realizar pruebas de unidad** | 2014-02-13 16:30 → 2014-02-12 15:30 (-1d) | 2014-02-26 08:30 → 2014-02-25 07:30 (-1d) |
| 196 | Realizar plan de pruebas de unidad | 2014-02-13 16:30 → 2014-02-12 15:30 (-1d) | 2014-02-15 12:30 → 2014-02-14 11:30 (-1d) |
| 197 | Diseñar pruebas de caja negra, caja blanca y basadas en estados según corresponda | 2014-02-15 12:30 → 2014-02-14 11:30 (-1d) | 2014-02-20 16:30 → 2014-02-19 15:30 (-1d) |
| 198 | Realizar pruebas de unidad | 2014-02-20 16:30 → 2014-02-19 15:30 (-1d) | 2014-02-22 12:30 → 2014-02-21 11:30 (-1d) |
| 199 | Documentar resultados | 2014-02-22 12:30 → 2014-02-21 11:30 (-1d) | 2014-02-26 08:30 → 2014-02-25 07:30 (-1d) |
| 200 | **Prueba 1...N** | 2014-03-15 07:30 → 2014-03-13 18:30 (-2d) | 2014-04-09 17:30 → 2014-04-08 16:30 (-1d) |
| 201 | **Planificar pruebas** | 2014-03-15 07:30 → 2014-03-13 18:30 (-2d) | 2014-03-18 15:30 → 2014-03-15 14:30 (-3d) |
| 202 | Describir estrategia de prueba | 2014-03-15 07:30 → 2014-03-13 18:30 (-2d) | 2014-03-15 17:30 → 2014-03-14 16:30 (-1d) |
| 203 | Estimar los recursos para la prueba | 2014-03-15 17:30 → 2014-03-14 16:30 (-1d) | 2014-03-18 10:30 → 2014-03-15 09:30 (-3d) |
| 204 | Planificar el esfuerzo de la prueba | 2014-03-18 10:30 → 2014-03-15 09:30 (-3d) | 2014-03-18 15:30 → 2014-03-15 14:30 (-3d) |
| 205 | **Diseñar pruebas** | 2014-03-18 15:30 → 2014-03-15 14:30 (-3d) | 2014-03-28 09:30 → 2014-03-27 08:30 (-1d) |
| 206 | Identificar casos de prueba | 2014-03-18 15:30 → 2014-03-15 14:30 (-3d) | 2014-03-19 13:30 → 2014-03-18 12:30 (-1d) |
| 207 | Describir casos de prueba | 2014-03-19 13:30 → 2014-03-18 12:30 (-1d) | 2014-03-22 07:30 → 2014-03-20 18:30 (-2d) |
| 208 | Estructurar procedimiento de prueba | 2014-03-22 07:30 → 2014-03-20 18:30 (-2d) | 2014-03-28 09:30 → 2014-03-27 08:30 (-1d) |
| 209 | **Automatizar pruebas** | 2014-03-18 15:30 → 2014-03-15 14:30 (-3d) | 2014-03-25 15:30 → 2014-03-22 14:30 (-3d) |
| 210 | Identificar procedimientos de prueba automatizables | 2014-03-18 15:30 → 2014-03-15 14:30 (-3d) | 2014-03-20 11:30 → 2014-03-19 10:30 (-1d) |
| 211 | Crear componente de prueba | 2014-03-20 11:30 → 2014-03-19 10:30 (-1d) | 2014-03-25 15:30 → 2014-03-22 14:30 (-3d) |
| 212 | **Realizar pruebas** | 2014-03-28 09:30 → 2014-03-27 08:30 (-1d) | 2014-04-08 10:30 → 2014-04-05 09:30 (-3d) |
| 213 | Realizar pruebas de integración | 2014-03-28 09:30 → 2014-03-27 08:30 (-1d) | 2014-04-01 15:30 → 2014-03-29 14:30 (-3d) |
| 214 | Realizar pruebas de sistema | 2014-03-28 09:30 → 2014-03-27 08:30 (-1d) | 2014-04-05 17:30 → 2014-04-04 16:30 (-1d) |
| 215 | Registrar resultados de pruebas | 2014-04-05 17:30 → 2014-04-04 16:30 (-1d) | 2014-04-08 10:30 → 2014-04-05 09:30 (-3d) |
| 216 | **Evaluar pruebas** | 2014-04-08 10:30 → 2014-04-05 09:30 (-3d) | 2014-04-09 17:30 → 2014-04-08 16:30 (-1d) |
| 217 | Evaluar esfuerzos de prueba | 2014-04-08 10:30 → 2014-04-05 09:30 (-3d) | 2014-04-08 15:30 → 2014-04-05 14:30 (-3d) |
| 218 | Comparar resultados con los objetivos establecidos en el plan de pruebas | 2014-04-08 15:30 → 2014-04-05 14:30 (-3d) | 2014-04-09 07:30 → 2014-04-05 18:30 (-4d) |
| 219 | Establecer métricas y fiabilidad del sistema | 2014-04-09 07:30 → 2014-04-05 18:30 (-4d) | 2014-04-09 17:30 → 2014-04-08 16:30 (-1d) |
| 220 | **Distribución del SW** | 2014-04-09 17:30 → 2014-04-08 16:30 (-1d) | 2014-04-15 14:30 → 2014-04-12 13:30 (-3d) |
| 221 | **Planificar la distribución** | 2014-04-09 17:30 → 2014-04-08 16:30 (-1d) | 2014-04-10 16:30 → 2014-04-09 15:30 (-1d) |
| 222 | Definir fecha de instalación del sistema | 2014-04-09 17:30 → 2014-04-08 16:30 (-1d) | 2014-04-10 09:30 → 2014-04-09 08:30 (-1d) |
| 223 | Definir lugar y fecha de capacitaciones | 2014-04-09 17:30 → 2014-04-08 16:30 (-1d) | 2014-04-10 11:30 → 2014-04-09 10:30 (-1d) |
| 224 | Definir recursos asignados a la distribución | 2014-04-10 11:30 → 2014-04-09 10:30 (-1d) | 2014-04-10 16:30 → 2014-04-09 15:30 (-1d) |
| 225 | **Producir unidad de distribución** | 2014-04-09 17:30 → 2014-04-08 16:30 (-1d) | 2014-04-12 16:30 → 2014-04-11 15:30 (-1d) |
| 226 | Definir forma de entrega del SW | 2014-04-09 17:30 → 2014-04-08 16:30 (-1d) | 2014-04-10 10:30 → 2014-04-09 09:30 (-1d) |
| 227 | Identificar los artefactos necesarios para instalar y usar el sistema | 2014-04-10 10:30 → 2014-04-09 09:30 (-1d) | 2014-04-11 08:30 → 2014-04-10 07:30 (-1d) |
| 228 | Empaquetar el producto | 2014-04-11 08:30 → 2014-04-10 07:30 (-1d) | 2014-04-12 16:30 → 2014-04-11 15:30 (-1d) |
| 229 | **Capacitaciones** | 2014-04-09 17:30 → 2014-04-08 16:30 (-1d) | 2014-04-15 14:30 → 2014-04-12 13:30 (-3d) |
| 230 | Confeccionar Material de Soporte | 2014-04-09 17:30 → 2014-04-08 16:30 (-1d) | 2014-04-12 11:30 → 2014-04-11 10:30 (-1d) |
| 231 | Organizar capacitaciones | 2014-04-09 17:30 → 2014-04-08 16:30 (-1d) | 2014-04-11 08:30 → 2014-04-10 07:30 (-1d) |
| 232 | Realizar las capacitaciones correspondientes | 2014-04-12 11:30 → 2014-04-11 10:30 (-1d) | 2014-04-15 09:30 → 2014-04-12 08:30 (-3d) |
| 233 | Evaluar la capacitacion | 2014-04-15 09:30 → 2014-04-12 08:30 (-3d) | 2014-04-15 14:30 → 2014-04-12 13:30 (-3d) |
